# imcloud公有云第二阶段开发计划v1

Schedule from MS Project, 2019-07-15 to 2020-01-08, A marks actual dates.

## Calendars

- 标准: Mon-Fri 08:00-12:00, 13:00-17:00; Sat-Sun off. Exceptions (off unless hours are given): 2019-09-13 (中秋节), 2019-09-29 08:00-12:00, 13:00-17:00 (工作日), 2019-10-01 to 2019-10-04 (国庆节), 2019-10-07 (国庆节), 2019-10-12 08:00-12:00, 13:00-17:00 (工作日).

## Resources

| Resource |
| --- |
| 席晔文 |
| 习云芳 |
| 钟波 |
| 李文静 |
| 孙杨寸 |
| 聂军 |
| 李斌 |
| 李浩 |
| 刘星 |
| 顾勇 |
| 邓皓 |
| 周凡 |
| 张璧 |
| 人员A |
| 人员B |
| 人员C |
| 人员D |
| 严文会 |
| 黄淼森 |
| 付培胜 |
| 所有 |
| 刘江珊 |
| 陈晶 |
| 95 |

## Schedule

| ID | WBS | Task | Type | Duration | Start | Finish | Predecessors | Complete | Remaining | Total slack | Resources | Work | Actual work | 输出物 |
| --- | --- | --- | --- | --- | --- | --- | --- | --- | --- | --- | --- | --- | --- | --- |
| 1 | 1 | **需求编写** |  | 45d | 2019-07-15 A | 2019-09-16 A |  | 100% |  |  |  | 128h | 128h |  |
| 2 | 1.1 | 功能模块需求跟踪矩阵 | manual | 5d | 2019-07-15 A | 2019-07-19 A |  | 100% |  |  | 邓皓 | 40h | 40h | 需求跟踪矩阵 |
| 3 | 1.2 | 设备通信接口 | manual | 6d | 2019-07-22 A | 2019-07-29 A | 2 | 100% |  |  | 邓皓 | 48h | 48h | 公有云设备通信接口文档 |
| 4 | 1.3 | Portal认证流程 | manual | 5d | 2019-09-09 A | 2019-09-16 A |  | 100% |  |  | 邓皓 | 40h | 40h | Portal认证需求文档 |
| 5 | 2 | **云端服务** |  | 22d | 2019-09-09 A | 2019-10-14 |  | 23% | 16.88d | 0d |  | 952h | 211.2h |  |
| 6 | 2.1 | **3.设备管理** |  | 16d | 2019-09-09 A | 2019-09-30 |  | 43% | 9.07d |  |  | 240h | 104h |  |
| 7 | 2.1.1 | 3.1设备发现服务端 | manual | 2d | 2019-09-11 A | 2019-09-12 A |  | 100% |  |  | 席晔文 | 16h | 16h |  |
| 8 | 2.1.2 | 3.2设备上线服务端MQTT | manual | 2d | 2019-09-16 A | 2019-09-17 |  | 80% | 0.4d |  | 席晔文 | 16h | 12.8h |  |
| 9 | 2.1.3 | 3.3AP管理前端 | manual | 6d | 2019-09-12 A | 2019-09-20 |  | 60% | 2.4d |  | 习云芳 | 48h | 28.8h |  |
| 10 | 2.1.4 | 3.3AP管理服务端 | manual | 7d | 2019-09-18 | 2019-09-26 | 12 |  |  |  | 钟波 | 56h |  |  |
| 11 | 2.1.5 | 3.4AC管理前端 | manual | 3d | 2019-09-09 A | 2019-09-11 |  | 80% | 0.6d |  | 习云芳 | 24h | 19.2h |  |
| 12 | 2.1.6 | 3.4AC管理服务端 | manual | 4d | 2019-09-11 A | 2019-09-17 |  | 85% | 0.6d |  | 钟波 | 32h | 27.2h |  |
| 13 | 2.1.7 | 3.6DCME管理前端 | manual | 3d | 2019-09-23 | 2019-09-25 | 9 |  |  |  | 习云芳 | 24h |  |  |
| 14 | 2.1.8 | 3.6DCME管理服务端 | manual | 3d | 2019-09-27 | 2019-09-30 | 10 |  |  |  | 钟波 | 24h |  |  |
| 15 | 2.2 | **4.网络配置** |  | 12d | 2019-09-11 A | 2019-09-27 |  | 26% | 8.91d |  |  | 208h | 53.6h |  |
| 16 | 2.2.1 | 4.1无线网络配置前端 | manual | 4d | 2019-09-11 A | 2019-09-17 |  | 80% | 0.8d |  | 李文静 | 32h | 25.6h |  |
| 17 | 2.2.2 | 4.1无线网络配置服务端 | manual | 5d | 2019-09-11 A | 2019-09-18 |  | 70% | 1.5d |  | 孙杨寸 | 40h | 28h |  |
| 18 | 2.2.3 | **4.3认证配置** |  | 9d | 2019-09-17 | 2019-09-27 |  |  |  |  |  | 96h |  |  |
| 19 | 2.2.3.1 | 4.3.1认证策略设置前端 | manual | 5d | 2019-09-18 | 2019-09-24 | 16 |  |  |  | 李文静 | 40h |  |  |
| 20 | 2.2.3.2 | 4.3.1认证策略设置服务端 | manual | 4d | 2019-09-18 | 2019-09-23 |  |  |  |  | 席晔文 | 32h |  |  |
| 21 | 2.2.3.3 | 4.3.4微信/短信设置前端 | manual | 2d | 2019-09-25 | 2019-09-26 | 19 |  |  |  | 李文静 | 16h |  |  |
| 22 | 2.2.3.4 | 4.3.4微信/短信设置服务端 | manual | 1d | 2019-09-24 | 2019-09-24 |  |  |  |  | 席晔文 | 8h |  |  |
| 23 | 2.2.4 | 4.4Portal认证页面缓存到设备 | manual | 5d | 2019-09-23 | 2019-09-27 |  |  |  |  | 聂军 | 40h |  |  |
| 24 | 2.3 | **5.用户Portal认证** |  | 18d | 2019-09-16 A | 2019-10-14 |  | 6% | 17d | 0d |  | 312h | 24h |  |
| 25 | 2.3.1 | 5.1账号认证5.2海报认证 （扫码认证）5.3短信认证5.4一键认证5.6微信公众号菜单认证5.7微信验证码认证5.9第三方Portal认证前端 | manual | 9d | 2019-09-27 | 2019-10-14 | 21 |  |  |  | 李文静 | 72h |  |  |
| 26 | 2.3.2 | 5.1账号认证服务端 | manual | 3d | 2019-09-16 A | 2019-09-18 |  | 50% | 1.5d |  | 李斌; 顾勇 | 48h | 24h |  |
| 27 | 2.3.3 | 5.2海报认证 （扫码认证）服务端 | manual | 3d | 2019-09-19 | 2019-09-23 |  |  |  |  | 李斌; 顾勇 | 48h |  |  |
| 28 | 2.3.4 | 5.3短信认证服务端 | manual | 3d | 2019-09-24 | 2019-09-26 |  |  |  |  | 李斌; 顾勇 | 48h |  |  |
| 29 | 2.3.5 | 5.4一键认证服务端 | manual | 3d | 2019-09-27 | 2019-09-30 |  |  |  |  | 李斌; 顾勇 | 48h |  |  |
| 30 | 2.3.6 | 5.6微信公众号菜单认证服务端 | manual | 2d | 2019-10-08 | 2019-10-09 |  |  |  |  | 李斌 | 16h |  |  |
| 31 | 2.3.7 | 5.7微信验证码认证服务端 | manual | 2d | 2019-10-10 | 2019-10-11 |  |  |  |  | 李斌 | 16h |  |  |
| 32 | 2.3.8 | 5.9第三方Portal认证服务端 | manual | 2d | 2019-10-12 | 2019-10-14 |  |  |  |  | 李斌 | 16h |  |  |

| ID | WBS | Task | Type | Duration | Start | Finish | Predecessors | Complete | Remaining | Total slack | Constraint | Resources | Work | Actual work |
| --- | --- | --- | --- | --- | --- | --- | --- | --- | --- | --- | --- | --- | --- | --- |
| 33 | 2.4 | **6.状态与监控** |  | 11d | 2019-09-18 | 2019-10-08 |  |  |  |  |  |  | 80h |  |
| 34 | 2.4.1 | 6.1网络设备概况前端 | manual | 3d | 2019-09-26 | 2019-09-29 | 13, 105, 151, 189 |  |  |  |  | 习云芳 | 24h |  |
| 35 | 2.4.2 | 6.1网络设备概况服务端 | manual | 2d | 2019-09-19 | 2019-09-20 | 17 |  |  |  |  | 孙杨寸 | 16h |  |
| 36 | 2.4.3 | 6.3日志管理前端 | manual | 3d | 2019-09-24 | 2019-09-26 |  |  |  |  |  | 孙杨寸 | 24h |  |
| 37 | 2.4.4 | 6.3日志管理服务端 | manual | 2d | 2019-09-30 | 2019-10-08 | 34 |  |  |  |  | 孙杨寸 | 16h |  |
| 38 | 2.5 | 数据上报 下发和Portal框架移植 | manual | 2d | 2019-09-16 A | 2019-09-17 A |  | 100% |  |  |  | 聂军 | 16h | 16h |
| 39 | 2.6 | 数据库设计 | manual | 2d | 2019-09-10 A | 2019-09-11 |  | 85% | 0.3d |  |  | 聂军 | 16h | 13.6h |
| 40 | 2.7 | 数据上报下发 | manual | 10d | 2019-09-25 | 2019-10-12 |  |  |  |  |  | 席晔文 | 80h |  |
| 41 | 3 | **AC** |  | 20d? | 2019-09-09 A | 2019-10-12 |  | 12% | 17.7d? | 0d |  |  | 320h | 36.8h |
| 42 | 3.1 | **二级AC开发** |  | 15d? | 2019-09-09 A | 2019-09-30 |  | 15% | 12.7d? | 0d |  |  | 240h | 36.8h |
| 43 | 3.1.1 | **二级AC注册公有云** |  | 7d? | 2019-09-09 A | 2019-09-19 |  | 66% | 2.4d? | 0d |  | 李浩 | 56h | 36.8h |
| 44 | 3.1.1.1 | 二级AC访问公有云url |  | 3d | 2019-09-09 A | 2019-09-12 A |  | 100% |  |  | start no earlier than 2019-09-09 |  |  |  |
| 45 | 3.1.1.2 | 二级AC接收并提取公有云回复的注册url |  | 2d? | 2019-09-12 A | 2019-09-17 | 44 | 80% | 0.4d? | 0d |  |  |  |  |
| 46 | 3.1.1.3 | 二级AC解析注册url，建立MQTT连接 |  | 2d? | 2019-09-17 | 2019-09-19 | 45 |  |  | 0d |  |  |  |  |
| 47 | 3.1.2 | **二级AC首次配置下发** |  | 8d? | 2019-09-19 | 2019-09-30 | 43 |  |  | 0d |  | 李浩 | 64h |  |
| 48 | 3.1.2.1 | 二级AC首次连接清空配置 |  | 3d | 2019-09-19 | 2019-09-24 | 46 |  |  | 0d |  |  |  |  |
| 49 | 3.1.2.2 | 二级AC接收整体配置并解析生效 |  | 5d? | 2019-09-24 | 2019-09-30 | 48 |  |  | 0d |  |  |  |  |
| 50 | 3.1.3 | **二级AC接口调整** |  | 15d | 2019-09-09 | 2019-09-30 |  |  |  | 0d |  | 刘星 | 120h |  |
| 51 | 3.1.3.1 | 公共接口实现 |  | 10d | 2019-09-09 | 2019-09-24 |  |  |  | 0d | start no earlier than 2019-09-09 |  |  |  |
| 52 | 3.1.3.2 | 二级AC专有通信接口 |  | 5d | 2019-09-24 | 2019-09-30 | 51 |  |  | 0d |  |  |  |  |
| 53 | 3.2 | **二级AC自测** |  | 5d | 2019-09-30 | 2019-10-12 | 42 |  |  |  |  |  | 80h |  |
| 54 | 3.2.1 | 二级AC注册公有云自测 |  | 3d | 2019-09-30 | 2019-10-10 | 49 |  |  | 0d |  | 李浩 | 24h |  |
| 55 | 3.2.2 | 二级AC上线配置下发自测 |  | 2d | 2019-10-10 | 2019-10-12 | 54 |  |  | 0d |  | 李浩 | 16h |  |
| 56 | 3.2.3 | 二级AC接口自测 |  | 5d | 2019-09-30 | 2019-10-12 | 52 |  |  | 0d |  | 刘星 | 40h |  |

| ID | WBS | Task | Type | Duration | Start | Finish | Total slack | Resources | Work |
| --- | --- | --- | --- | --- | --- | --- | --- | --- | --- |
| 57 | 4 | **DCME** |  | 57d | 2019-08-05 | 2019-10-28 | 0d |  | 581.6h |
| 58 | 4.1 | **开发** |  | 48d | 2019-08-05 | 2019-10-15 | 0d |  | 488h |
| 59 | 4.1.1 | mqtt、json、xml、设备配置、信息熟悉等先期工作 | manual | 23d | 2019-08-05 | 2019-09-04 |  | 周凡 | 184h |
| 60 | 4.1.2 | 代码基础结构，包含多线程、mqtt数据发送接收等 | manual | 6d | 2019-09-05 | 2019-09-12 |  | 张璧 | 48h |
| 61 | 4.1.3 | 时钟同步、设备重新发现，定时更新 | manual | 6d | 2019-09-05 | 2019-09-12 |  | 周凡 | 48h |
| 62 | 4.1.4 | 配置文件同步，无线网络配置下发 | manual | 5d | 2019-09-16 | 2019-09-20 |  | 周凡 | 40h |
| 63 | 4.1.5 | 设备发现，心跳，认证 | manual | 7d | 2019-09-16 | 2019-09-24 |  | 张璧 | 56h |
| 64 | 4.1.6 | DCME上线、定时上报、ap定时上报、shell命令执行等 | manual | 7d | 2019-09-23 | 2019-09-30 |  | 周凡 | 56h |
| 65 | 4.1.7 | 自测所有功能点 | manual | 7d | 2019-10-08 | 2019-10-15 |  | 周凡 | 56h |
| 66 | 4.2 | **联调** |  | 9d | 2019-10-16 | 2019-10-28 | 0d |  | 93.6h |
| 67 | 4.2.1 | 设备发现和上线 | manual | 2d | 2019-10-16 | 2019-10-17 |  | 周凡 | 16h |
| 68 | 4.2.2 | 上报和配置下发 | manual | 4d | 2019-10-18 | 2019-10-23 |  | 周凡 | 32h |
| 69 | 4.2.3 | portal联调 | manual | 3d | 2019-10-24 | 2019-10-28 |  | 周凡 | 24h |
| 70 | 4.2.4 | 张璧协同配合周凡 | manual | 9d | 2019-10-16 | 2019-10-28 |  | 张璧 [30%] | 21.6h |
| 71 | 5 | **集成联调** |  | 11d | 2019-10-14 | 2019-10-28 |  |  | 364h |
| 72 | 5.1 | **二级AC联调** |  | 10d | 2019-10-15 | 2019-10-28 | 0d |  | 296h |
| 73 | 5.1.1 | 设备发现和上线联调 | manual | 2d | 2019-10-15 | 2019-10-16 |  | 席晔文 [50%]; 李文静; 李浩 | 40h |
| 74 | 5.1.2 | 设备信息上报和配置下发联调 | manual | 3d | 2019-10-17 | 2019-10-21 |  | 李文静; 席晔文 [50%]; 李浩 | 60h |
| 75 | 5.1.3 | 无线网络配置下发联调 | manual | 2d | 2019-10-22 | 2019-10-23 |  | 李浩; 李文静; 席晔文 [50%] | 40h |
| 76 | 5.1.4 | 认证策略下发联调 | manual | 3d | 2019-10-24 | 2019-10-28 |  | 李浩; 李文静; 席晔文 [50%] | 60h |
| 77 | 5.1.5 | Portal联调 | manual | 6d | 2019-10-15 | 2019-10-22 |  | 李斌; 刘星 | 96h |
| 78 | 5.2 | **DCME联调** |  | 9d | 2019-10-16 | 2019-10-28 | 0d |  | 68h |
| 79 | 5.2.1 | 设备发现和上线 | manual | 2d | 2019-10-16 | 2019-10-17 |  | 席晔文 [50%] | 8h |
| 80 | 5.2.2 | 上报和配置下发 | manual | 7d | 2019-10-18 | 2019-10-28 |  | 席晔文 [50%] | 28h |
| 81 | 5.2.3 | Portal联调 | manual | 4d | 2019-10-23 | 2019-10-28 |  | 李斌 | 32h |

| ID | WBS | Task | Type | Duration | Start | Finish | Predecessors | Total slack | Free slack | Resources | Work |
| --- | --- | --- | --- | --- | --- | --- | --- | --- | --- | --- | --- |
| 82 | 6 | **集成自测** |  | 9d | 2019-10-29 | 2019-11-08 | 71 |  |  |  | 468h |
| 83 | 6.1 | **自模块测试** |  | 5d | 2019-10-29 | 2019-11-04 |  | 0d |  |  | 276h |
| 84 | 6.1.1 | 日志管理和网络概述 | manual | 5d | 2019-10-29 | 2019-11-04 |  |  |  | 孙杨寸 [50%]; 李文静 [50%] | 40h |
| 85 | 6.1.2 | 设备管理 | manual | 5d | 2019-10-29 | 2019-11-04 |  |  |  | 习云芳; 钟波 [50%]; 席晔文 [30%] | 72h |
| 86 | 6.1.3 | Portal认证 | manual | 5d | 2019-10-29 | 2019-11-04 |  |  |  | 李斌; 顾勇 | 80h |
| 87 | 6.1.4 | 认证策略配置 | manual | 5d | 2019-10-29 | 2019-11-04 |  |  |  | 李文静 [50%]; 席晔文 [30%]; 钟波 [50%] | 52h |
| 88 | 6.1.5 | 无线网络配置 | manual | 5d | 2019-10-29 | 2019-11-04 |  |  |  | 席晔文 [30%]; 孙杨寸 [50%] | 32h |
| 89 | 6.2 | **交叉测试** |  | 4d | 2019-11-05 | 2019-11-08 |  | 0d |  |  | 192h |
| 90 | 6.2.1 | 日志管理和网络概述 | manual | 4d | 2019-11-05 | 2019-11-08 |  |  |  | 李文静 [50%]; 钟波 [50%] | 32h |
| 91 | 6.2.2 | 设备管理 | manual | 4d | 2019-11-05 | 2019-11-08 |  |  |  | 习云芳 [50%]; 席晔文 [50%] | 32h |
| 92 | 6.2.3 | Portal认证 | manual | 4d | 2019-11-05 | 2019-11-08 |  |  |  | 李斌; 顾勇 | 64h |
| 93 | 6.2.4 | 认证策略配置 | manual | 4d | 2019-11-05 | 2019-11-08 |  |  |  | 孙杨寸 [50%]; 习云芳 [50%] | 32h |
| 94 | 6.2.5 | 无线网络配置 | manual | 4d | 2019-11-05 | 2019-11-08 |  |  |  | 李文静 [50%]; 钟波 [50%] | 32h |
| 95 | 7 | 发布测试版本（tr4） | manual | 1d? | 2019-11-11 | 2019-11-11 | 82 |  |  |  |  |
| 96 | 8 | **测试准备工作** |  | 47.5d? | 2019-09-29 | 2019-12-09 | 23 | -4d | 0d |  | 458h |
| 97 | 8.1 | 测试计划和测试策略撰写 |  | 5d | 2019-09-29 | 2019-10-10 |  | -4d | 0d | 严文会 | 40h |
| 98 | 8.2 | **功能测试方案撰写和评审** |  | 20.5d? | 2019-09-30 | 2019-11-01 | 97 | 0d |  |  | 258h |
| 99 | 8.2.1 | **设备管理** |  | 13.5d? | 2019-09-30 | 2019-10-23 |  | 0d |  |  | 108h |
| 100 | 8.2.1.1 | **设备管理前端** |  | 6d | 2019-09-30 | 2019-10-12 |  | 0d |  |  | 48h |
| 101 | 8.2.1.1.1 | AP管理前端 | manual | 1d | 2019-09-30 | 2019-09-30 |  |  |  | 刘江珊 | 8h |
| 102 | 8.2.1.1.2 | AP管理注册、上线、上报 | manual | 1d | 2019-10-08 | 2019-10-08 | 101 |  |  | 刘江珊 | 8h |
| 103 | 8.2.1.1.3 | AC管理前端 | manual | 1d | 2019-10-09 | 2019-10-09 | 102 |  |  | 刘江珊 | 8h |
| 104 | 8.2.1.1.4 | AC管理注册、上线、上报 | manual | 1d | 2019-10-10 | 2019-10-10 | 103 |  |  | 刘江珊 | 8h |
| 105 | 8.2.1.1.5 | DCME管理前端 | manual | 1d | 2019-10-11 | 2019-10-11 | 104 |  |  | 刘江珊 | 8h |
| 106 | 8.2.1.1.6 | DCME注册、上线、上报 | manual | 1d | 2019-10-12 | 2019-10-12 | 105 |  |  | 刘江珊 | 8h |

| ID | WBS | Task | Type | Duration | Start | Finish | Predecessors | Total slack | Free slack | Constraint | Resources | Work |
| --- | --- | --- | --- | --- | --- | --- | --- | --- | --- | --- | --- | --- |
| 107 | 8.2.1.2 | **二级AC** |  | 2d | 2019-10-14 | 2019-10-15 |  |  |  |  |  | 16h |
| 108 | 8.2.1.2.1 | 二级AC注册公有云 | manual | 2d | 2019-10-14 | 2019-10-15 | 106 |  |  |  | 刘江珊 | 16h |
| 109 | 8.2.1.3 | **DCME** |  | 1d? | 2019-10-10 | 2019-10-11 |  |  |  |  |  | 28h |
| 110 | 8.2.1.3.1 | 时钟同步、设备重新发现，定时更新 | manual | 1.5d | 2019-10-16 | 2019-10-17 | 108 |  |  |  | 刘江珊 | 12h |
| 111 | 8.2.1.3.2 | DCME上线、定时上报、ap定时上报、shell命令执行等 | manual | 2d | 2019-10-17 | 2019-10-21 | 110 |  |  |  | 刘江珊 | 16h |
| 112 | 8.2.1.4 | AP、AC、DCME兼容性 | manual | 2d | 2019-10-21 | 2019-10-23 | 111 |  |  |  | 刘江珊 | 16h |
| 113 | 8.2.2 | **网络配置** |  | 6d? | 2019-09-30 | 2019-10-12 |  |  |  |  |  | 44h |
| 114 | 8.2.2.1 | 无线网络配置前端 | manual | 1.5d | 2019-09-30 | 2019-10-08 |  |  |  |  | 陈晶 | 12h |
| 115 | 8.2.2.2 | 二级AC网络配置下发、同步 | manual | 1d | 2019-10-08 | 2019-10-09 | 114 |  |  |  | 陈晶 | 8h |
| 116 | 8.2.2.3 | DCME无线网络配置下发、同步 | manual | 1d | 2019-10-09 | 2019-10-10 | 115 |  |  |  | 陈晶 | 8h |
| 117 | 8.2.2.4 | AP无线网络配置下发、同步 | manual | 0.5d | 2019-10-10 | 2019-10-10 | 116 |  |  |  | 陈晶 | 4h |
| 118 | 8.2.2.5 | 认证配置 | manual | 1.5d | 2019-10-11 | 2019-10-12 | 117 |  |  |  | 陈晶 | 12h |
| 119 | 8.2.3 | **portal认证** |  | 12d? | 2019-10-12 | 2019-10-28 |  |  |  |  |  | 88h |
| 120 | 8.2.3.1 | 账号认证 | manual | 1d | 2019-10-12 | 2019-10-14 | 118 |  |  |  | 陈晶 | 8h |
| 121 | 8.2.3.2 | 海报认证 （扫码认证） | manual | 1d | 2019-10-14 | 2019-10-15 | 120 |  |  |  | 陈晶 | 8h |
| 122 | 8.2.3.3 | 短信认证 | manual | 1d | 2019-10-15 | 2019-10-16 | 121 |  |  |  | 陈晶 | 8h |
| 123 | 8.2.3.4 | 一键认证 | manual | 1d | 2019-10-16 | 2019-10-17 | 122 |  |  |  | 陈晶 | 8h |
| 124 | 8.2.3.5 | 微信公众号菜单认证 | manual | 1d | 2019-10-17 | 2019-10-18 | 123 |  |  |  | 陈晶 | 8h |
| 125 | 8.2.3.6 | 微信验证码认证 | manual | 1d | 2019-10-18 | 2019-10-21 | 124 |  |  |  | 陈晶 | 8h |
| 126 | 8.2.3.7 | 第三方Portal认证 | manual | 1d | 2019-10-21 | 2019-10-22 | 125 |  |  |  | 陈晶 | 8h |
| 127 | 8.2.3.8 | 终端下线、无感知认证 | manual | 1d | 2019-10-22 | 2019-10-23 | 126 |  |  |  | 陈晶 | 8h |
| 128 | 8.2.3.9 | Portal认证页面缓存到设备 | manual | 1d | 2019-10-23 | 2019-10-24 | 127 |  |  |  | 陈晶 | 8h |
| 129 | 8.2.3.10 | AP、AC、DCME兼容性 | manual | 1d | 2019-10-24 | 2019-10-25 | 128 |  |  |  | 陈晶 | 8h |
| 130 | 8.2.3.11 | 终端兼容性 | manual | 1d | 2019-10-25 | 2019-10-28 | 129 |  |  |  | 陈晶 | 8h |
| 131 | 8.2.4 | 状态与监控 |  | 1d | 2019-10-28 | 2019-10-28 |  | 44d | 0d | start no earlier than 2019-10-28 | 付培胜 [50%] | 4h |
| 132 | 8.2.5 | 日志管理 | manual | 1.5d | 2019-10-29 | 2019-10-30 | 131 |  |  |  | 付培胜 [50%] | 6h |
| 133 | 8.2.6 | 告警通知 | manual | 1d | 2019-10-30 | 2019-10-31 | 132 |  |  |  | 付培胜 [50%] | 4h |
| 134 | 8.2.7 | 软件国际化 | manual | 1d | 2019-10-31 | 2019-11-01 | 133 |  |  |  | 付培胜 [50%] | 4h |
| 135 | 8.3 | 准入测试方案 |  | 1d | 2019-11-04 | 2019-11-04 |  | 47.5d |  | start no earlier than 2019-11-04 | 刘江珊 | 8h |
| 136 | 8.4 | 集成测试方案撰写和评审 |  | 5d | 2019-12-02 | 2019-12-09 | 134, 165, 203 | 23d |  |  | 付培胜 | 40h |
| 137 | 8.5 | 性能测试方案撰写和测试手段调研 |  | 3d | 2019-09-29 | 2019-10-08 |  | 56.5d | 2d |  | 黄淼森 | 24h |
| 138 | 8.6 | 测试环境搭建和相关测试设备的准备 |  | 3d | 2019-10-11 | 2019-10-15 | 137 | 53.5d | 0d | start no earlier than 2019-10-11 | 严文会 | 24h |
| 139 | 8.7 | 接口功能录制和预测试（后期利用jemeter进行接口回归） |  | 8d | 2019-10-16 | 2019-10-25 | 138 | 53.5d |  |  | 黄淼森 | 64h |

| ID | WBS | Task | Type | Duration | Start | Finish | Predecessors | Total slack | Free slack | Resources | Work |
| --- | --- | --- | --- | --- | --- | --- | --- | --- | --- | --- | --- |
| 140 | 9 | **功能测试** |  | 26d | 2019-11-12 | 2019-12-17 |  | 0d |  |  | 472h |
| 141 | 9.1 | **第一轮功能测试** |  | 14d | 2019-11-12 | 2019-11-29 |  |  |  |  | 472h |
| 142 | 9.1.1 | 账号注册登录和权限管理模块（涵盖账号管理/企业站点管理/管理员/用户管理） |  | 4d | 2019-11-12 | 2019-11-15 | 95 | 4d | 0d | 黄淼森 | 32h |
| 143 | 9.1.2 | 账号注册登录和权限管理模块（涵盖账号管理/企业站点管理/管理员/用户管理） |  | 2d | 2019-11-18 | 2019-11-19 | 142 | 4d | 0d | 黄淼森 | 16h |
| 144 | 9.1.3 | 账号注册登录和权限管理模块Bug回归和测试报告撰写 |  | 2d | 2019-11-20 | 2019-11-21 | 143 | 4d |  | 黄淼森 | 16h |
| 145 | 9.1.4 | **设备管理** |  | 8d? | 2019-11-12 | 2019-11-21 |  |  |  |  | 64h |
| 146 | 9.1.4.1 | **设备管理前端** |  | 5d? | 2019-11-12 | 2019-11-18 |  |  |  |  | 36h |
| 147 | 9.1.4.1.1 | AP管理前端 | manual | 0.5d | 2019-11-12 | 2019-11-12 | 95 |  |  | 刘江珊 | 4h |
| 148 | 9.1.4.1.2 | AP管理注册、上线、上报 | manual | 1d | 2019-11-12 | 2019-11-13 | 147 |  |  | 刘江珊 | 8h |
| 149 | 9.1.4.1.3 | AC管理前端 | manual | 0.5d | 2019-11-13 | 2019-11-13 | 148 |  |  | 刘江珊 | 4h |
| 150 | 9.1.4.1.4 | AC管理注册、上线、上报 | manual | 1d | 2019-11-14 | 2019-11-14 | 149 |  |  | 刘江珊 | 8h |
| 151 | 9.1.4.1.5 | DCME管理前端 | manual | 0.5d | 2019-11-15 | 2019-11-15 | 150 |  |  | 刘江珊 | 4h |
| 152 | 9.1.4.1.6 | DCME注册、上线、上报 | manual | 1d | 2019-11-15 | 2019-11-18 | 151 |  |  | 刘江珊 | 8h |
| 153 | 9.1.4.2 | **二级AC** |  | 2d? | 2019-11-12 | 2019-11-13 |  |  |  |  | 8h |
| 154 | 9.1.4.2.1 | 二级AC注册公有云 | manual | 1d | 2019-11-18 | 2019-11-19 | 152 |  |  | 刘江珊 | 8h |
| 155 | 9.1.4.3 | **DCME** |  | 2d? | 2019-11-19 | 2019-11-20 |  |  |  |  | 12h |
| 156 | 9.1.4.3.1 | 时钟同步、设备重新发现，定时更新 | manual | 0.5d | 2019-11-19 | 2019-11-19 | 154 |  |  | 刘江珊 | 4h |
| 157 | 9.1.4.3.2 | DCME上线、定时上报、ap定时上报、shell命令执行等 | manual | 1d | 2019-11-20 | 2019-11-20 | 156 |  |  | 刘江珊 | 8h |
| 158 | 9.1.4.4 | AP、AC、DCME兼容性 | manual | 1d | 2019-11-21 | 2019-11-21 | 157 |  |  | 刘江珊 | 8h |
| 159 | 9.1.5 | **网络配置** |  | 4d? | 2019-11-22 | 2019-11-27 |  |  |  |  | 32h |
| 160 | 9.1.5.1 | 无线网络配置前端 | manual | 0.5d | 2019-11-22 | 2019-11-22 | 158 |  |  | 刘江珊 | 4h |
| 161 | 9.1.5.2 | 二级AC网络配置下发、同步 | manual | 0.5d | 2019-11-22 | 2019-11-22 | 160 |  |  | 刘江珊 | 4h |
| 162 | 9.1.5.3 | DCME无线网络配置下发、同步 | manual | 0.5d | 2019-11-25 | 2019-11-25 | 161 |  |  | 刘江珊 | 4h |
| 163 | 9.1.5.4 | AP无线网络配置下发、同步 | manual | 0.5d | 2019-11-25 | 2019-11-25 | 162 |  |  | 刘江珊 | 4h |
| 164 | 9.1.5.5 | 认证配置 | manual | 1d | 2019-11-26 | 2019-11-26 | 163 |  |  | 刘江珊 | 8h |
| 165 | 9.1.5.6 | 软件国际化 | manual | 1d | 2019-11-27 | 2019-11-27 | 164 |  |  | 刘江珊 | 8h |

| ID | WBS | Task | Type | Duration | Start | Finish | Predecessors | Total slack | Resources | Work |
| --- | --- | --- | --- | --- | --- | --- | --- | --- | --- | --- |
| 166 | 9.1.6 | **portal认证** |  | 10d? | 2019-11-12 | 2019-11-25 |  |  |  | 80h |
| 167 | 9.1.6.1 | 账号认证 | manual | 1d | 2019-11-12 | 2019-11-12 | 95 |  | 陈晶 | 8h |
| 168 | 9.1.6.2 | 海报认证 （扫码认证） | manual | 1d | 2019-11-13 | 2019-11-13 | 167 |  | 陈晶 | 8h |
| 169 | 9.1.6.3 | 短信认证 | manual | 0.5d | 2019-11-14 | 2019-11-14 | 168 |  | 陈晶 | 4h |
| 170 | 9.1.6.4 | 一键认证 | manual | 0.5d | 2019-11-14 | 2019-11-14 | 169 |  | 陈晶 | 4h |
| 171 | 9.1.6.5 | 微信公众号菜单认证 | manual | 1d | 2019-11-15 | 2019-11-15 | 170 |  | 陈晶 | 8h |
| 172 | 9.1.6.6 | 微信验证码认证 | manual | 1d | 2019-11-18 | 2019-11-18 | 171 |  | 陈晶 | 8h |
| 173 | 9.1.6.7 | 第三方Portal认证 | manual | 1d | 2019-11-19 | 2019-11-19 | 172 |  | 陈晶 | 8h |
| 174 | 9.1.6.8 | 终端下线、无感知认证 | manual | 1.5d | 2019-11-20 | 2019-11-21 | 173 |  | 陈晶 | 12h |
| 175 | 9.1.6.9 | Portal认证页面缓存到设备 | manual | 0.5d | 2019-11-21 | 2019-11-21 | 174 |  | 陈晶 | 4h |
| 176 | 9.1.6.10 | AP、AC、DCME兼容性 | manual | 1d | 2019-11-22 | 2019-11-22 | 175 |  | 陈晶 | 8h |
| 177 | 9.1.6.11 | 终端兼容性 | manual | 1d | 2019-11-25 | 2019-11-25 | 176 |  | 陈晶 | 8h |
| 178 | 9.1.7 | 状态与监控 |  | 0.5d? | 2019-11-26 | 2019-11-26 | 177 | 0d | 陈晶 | 4h |
| 179 | 9.1.8 | 日志管理 | manual | 1d | 2019-11-26 | 2019-11-27 | 178 |  | 陈晶 | 8h |
| 180 | 9.1.9 | 告警通知 | manual | 0.5d | 2019-11-27 | 2019-11-27 | 179 |  | 陈晶 | 4h |
| 181 | 9.1.10 | bug检验和版本发布 | manual | 2d | 2019-11-28 | 2019-11-29 | 180 |  | 刘江珊; 陈晶 | 32h |
| 182 | 9.1.11 | **第二轮功能测试** |  | 12d | 2019-12-02 | 2019-12-17 |  |  |  | 184h |
| 183 | 9.1.11.1 | **设备管理** |  | 7d? | 2019-12-02 | 2019-12-10 |  |  |  | 52h |
| 184 | 9.1.11.1.1 | **设备管理前端** |  | 3d? | 2019-12-02 | 2019-12-04 |  |  |  | 24h |
| 185 | 9.1.11.1.1.1 | AP管理前端 | manual | 0.5d | 2019-12-02 | 2019-12-02 | 181 |  | 陈晶 | 4h |
| 186 | 9.1.11.1.1.2 | AP管理注册、上线、上报 | manual | 0.5d | 2019-12-02 | 2019-12-02 | 185 |  | 陈晶 | 4h |
| 187 | 9.1.11.1.1.3 | AC管理前端 | manual | 0.5d | 2019-12-03 | 2019-12-03 | 186 |  | 陈晶 | 4h |
| 188 | 9.1.11.1.1.4 | AC管理注册、上线、上报 | manual | 0.5d | 2019-12-03 | 2019-12-03 | 187 |  | 陈晶 | 4h |
| 189 | 9.1.11.1.1.5 | DCME管理前端 | manual | 0.5d | 2019-12-04 | 2019-12-04 | 188 |  | 陈晶 | 4h |
| 190 | 9.1.11.1.1.6 | DCME注册、上线、上报 | manual | 0.5d | 2019-12-04 | 2019-12-04 | 189 |  | 陈晶 | 4h |

| ID | WBS | Task | Type | Duration | Start | Finish | Predecessors | Total slack | Resources | Work |
| --- | --- | --- | --- | --- | --- | --- | --- | --- | --- | --- |
| 191 | 9.1.11.1.2 | **二级AC** |  | 2d? | 2019-12-02 | 2019-12-03 |  |  |  | 8h |
| 192 | 9.1.11.1.2.1 | 二级AC注册公有云 | manual | 1d | 2019-12-05 | 2019-12-05 | 190 |  | 陈晶 | 8h |
| 193 | 9.1.11.1.3 | **DCME** |  | 2d? | 2019-12-06 | 2019-12-09 |  |  |  | 12h |
| 194 | 9.1.11.1.3.1 | 时钟同步、设备重新发现，定时更新 | manual | 0.5d | 2019-12-06 | 2019-12-06 | 192 |  | 陈晶 | 4h |
| 195 | 9.1.11.1.3.2 | DCME上线、定时上报、ap定时上报、shell命令执行等 | manual | 1d | 2019-12-06 | 2019-12-09 | 194 |  | 陈晶 | 8h |
| 196 | 9.1.11.1.4 | AP、AC、DCME兼容性 | manual | 1d | 2019-12-09 | 2019-12-10 | 195 |  | 陈晶 | 8h |
| 197 | 9.1.11.2 | **网络配置** |  | 4d? | 2019-12-10 | 2019-12-13 |  |  |  | 24h |
| 198 | 9.1.11.2.1 | 无线网络配置前端 | manual | 0.5d | 2019-12-10 | 2019-12-10 | 196 |  | 陈晶 | 4h |
| 199 | 9.1.11.2.2 | 二级AC网络配置下发、同步 | manual | 0.5d | 2019-12-11 | 2019-12-11 | 198 |  | 陈晶 | 4h |
| 200 | 9.1.11.2.3 | DCME无线网络配置下发、同步 | manual | 0.5d | 2019-12-11 | 2019-12-11 | 199 |  | 陈晶 | 4h |
| 201 | 9.1.11.2.4 | AP无线网络配置下发、同步 | manual | 0.5d | 2019-12-12 | 2019-12-12 | 200 |  | 陈晶 | 4h |
| 202 | 9.1.11.2.5 | 认证配置 | manual | 1d | 2019-12-12 | 2019-12-13 | 201 |  | 陈晶 | 8h |
| 203 | 9.1.11.3 | 软件国际化 | manual | 0.5d | 2019-12-02 | 2019-12-02 | 181 |  | 刘江珊 | 4h |
| 204 | 9.1.11.4 | **portal认证** |  | 7d | 2019-12-04 | 2019-12-12 |  |  |  | 64h |
| 205 | 9.1.11.4.1 | 账号认证 | manual | 1d | 2019-12-02 | 2019-12-03 | 203 |  | 刘江珊 | 8h |
| 206 | 9.1.11.4.2 | 海报认证 （扫码认证） | manual | 0.5d | 2019-12-03 | 2019-12-03 | 205 |  | 刘江珊 | 4h |
| 207 | 9.1.11.4.3 | 短信认证 | manual | 0.5d | 2019-12-04 | 2019-12-04 | 206 |  | 刘江珊 | 4h |
| 208 | 9.1.11.4.4 | 一键认证 | manual | 0.5d | 2019-12-04 | 2019-12-04 | 207 |  | 刘江珊 | 4h |
| 209 | 9.1.11.4.5 | 微信公众号菜单认证 | manual | 0.5d | 2019-12-05 | 2019-12-05 | 208 |  | 刘江珊 | 4h |
| 210 | 9.1.11.4.6 | 微信验证码认证 | manual | 0.5d | 2019-12-05 | 2019-12-05 | 209 |  | 刘江珊 | 4h |
| 211 | 9.1.11.4.7 | 第三方Portal认证 | manual | 1d | 2019-12-06 | 2019-12-06 | 210 |  | 刘江珊 | 8h |
| 212 | 9.1.11.4.8 | 终端下线、无感知认证 | manual | 1d | 2019-12-09 | 2019-12-09 | 211 |  | 刘江珊 | 8h |
| 213 | 9.1.11.4.9 | Portal认证页面缓存到设备 | manual | 0.5d | 2019-12-10 | 2019-12-10 | 212 |  | 刘江珊 | 4h |
| 214 | 9.1.11.4.10 | AP、AC、DCME兼容性 | manual | 1d | 2019-12-10 | 2019-12-11 | 213 |  | 刘江珊 | 8h |
| 215 | 9.1.11.4.11 | 终端兼容性 | manual | 1d | 2019-12-11 | 2019-12-12 | 214 |  | 刘江珊 | 8h |
| 216 | 9.1.11.5 | 状态与监控 |  | 0.5d? | 2019-12-12 | 2019-12-12 | 215 | 0d | 刘江珊 | 4h |
| 217 | 9.1.11.6 | 日志管理 | manual | 0.5d | 2019-12-13 | 2019-12-13 | 216 |  | 刘江珊 | 4h |
| 218 | 9.1.11.7 | bug回归和版本发布 | manual | 2d | 2019-12-13 | 2019-12-17 | 217 |  | 刘江珊; 陈晶 | 32h |

| ID | WBS | Task | Duration | Start | Finish | Predecessors | Total slack | Resources | Work | 输出物 |
| --- | --- | --- | --- | --- | --- | --- | --- | --- | --- | --- |
| 219 | 10 | **性能测试** | 10d | 2019-11-28 | 2019-12-11 |  |  |  | 80h | 性能测试报告 |
| 220 | 10.1 | 性能测试第一轮 | 6d | 2019-11-28 | 2019-12-05 | 144 | 0d | 黄淼森 | 48h |  |
| 221 | 10.2 | 性能测试第二轮 | 3d | 2019-12-06 | 2019-12-10 | 220 | 0d | 黄淼森 | 24h |  |
| 222 | 10.3 | 性能测试回归和测试报告撰写 | 1d | 2019-12-11 | 2019-12-11 | 221 | 0d | 黄淼森 | 8h |  |
| 223 | 11 | **集成测试** | 11d | 2019-12-17 | 2020-01-01 |  | 0d | 所有 | 88h |  |
| 224 | 11.1 | 第一轮集成测试 | 5d | 2019-12-17 | 2019-12-24 | 218 | 0d |  |  | 第一轮集成测试报告 |
| 225 | 11.2 | 第二轮集成测试 | 5d | 2019-12-24 | 2019-12-31 | 224 | 0d |  |  | 第二轮集成测试报告 |
| 226 | 11.3 | 集成测试bug回归和报告撰写 | 1d | 2019-12-31 | 2020-01-01 | 225 | 0d |  |  |  |
| 227 | 12 | **确认测试** | 5d | 2020-01-01 | 2020-01-08 |  | 0d |  | 80h |  |
| 228 | 12.1 | 确认测试第一轮功能测试 | 2d | 2020-01-01 | 2020-01-03 | 226 | 0d | 陈晶; 刘江珊 | 32h |  |
| 229 | 12.2 | 确认测试bug回归和报告撰写 | 1d | 2020-01-03 | 2020-01-06 | 228 | 0d | 陈晶; 刘江珊 | 16h | 确认测试报告 |
| 230 | 12.3 | 确认测试第二轮功能测试 | 2d | 2020-01-06 | 2020-01-08 | 229 | 0d | 陈晶; 刘江珊 | 32h | 确认测试报告 |
