# imcloud公有云第二阶段开发计划

Schedule from MS Project, 2019-07-15 to 2020-01-08, A marks actual dates.

## Calendars

- 标准: Mon-Fri 08:00-12:00, 13:00-17:00; Sat-Sun off. Exceptions (off unless hours are given): 2019-09-13 (中秋节), 2019-09-29 08:00-12:00, 13:00-17:00 (工作日), 2019-10-01 to 2019-10-04 (国庆节), 2019-10-07 (国庆节), 2019-10-12 08:00-12:00, 13:00-17:00 (工作日).

## Resources

| Resource |
| --- |
| 席晔文 |
| 习云芳 |
| 钟波 |
| 李文静 |
| 孙杨寸 |
| 聂军 |
| 李斌 |
| 李浩 |
| 刘星 |
| 顾勇 |
| 邓皓 |
| 周凡 |
| 张璧 |
| 严文会 |
| 刘江珊 |
| 陈晶 |
| 付培胜 |
| 黄淼森 |
| 所有 |

## Schedule

| ID | WBS | Task | Type | Duration | Start | Finish | Predecessors | Complete | Remaining | Actual start | Total slack | Resources | Work | Actual work | 输出物 |
| --- | --- | --- | --- | --- | --- | --- | --- | --- | --- | --- | --- | --- | --- | --- | --- |
| 1 | 1 | **Imcloud公有云** |  | 123.5d? | 2019-07-15 A | 2020-01-08 |  | 30% | 86.82d? |  | 0d |  | 4031.6h | 1163.6h |  |
| 2 | 1.1 | **需求编写** |  | 45d | 2019-07-15 A | 2019-09-16 A |  | 100% |  |  |  |  | 128h | 128h |  |
| 3 | 1.1.1 | 功能模块需求跟踪矩阵 | manual | 5d | 2019-07-15 A | 2019-07-19 A |  | 100% |  |  |  | 邓皓 | 40h | 40h | 需求跟踪矩阵 |
| 4 | 1.1.2 | 设备通信接口 | manual | 6d | 2019-07-22 A | 2019-07-29 A | 3 | 100% |  |  |  | 邓皓 | 48h | 48h | 公有云设备通信接口文档 |
| 5 | 1.1.3 | Portal认证流程 | manual | 5d | 2019-09-09 A | 2019-09-16 A |  | 100% |  |  |  | 邓皓 | 40h | 40h | Portal认证需求文档 |
| 6 | 1.2 | **云端服务** |  | 22d | 2019-09-09 A | 2019-10-14 |  | 75% | 5.42d |  | 0d |  | 992h | 740h |  |
| 7 | 1.2.1 | **3.设备管理** |  | 16d | 2019-09-09 A | 2019-09-30 |  | 87% | 2.03d |  |  |  | 240h | 209.6h |  |
| 8 | 1.2.1.1 | 3.1设备发现服务端 | manual | 2d | 2019-09-11 A | 2019-09-12 A |  | 100% |  |  |  | 席晔文 | 16h | 16h | 自测报告_设备发现_后端.xlsx |
| 9 | 1.2.1.2 | 3.2设备上线服务端MQTT | manual | 2d | 2019-09-16 A | 2019-09-17 |  | 80% | 0.4d |  |  | 席晔文 | 16h | 12.8h |  |
| 10 | 1.2.1.3 | 3.3AP管理前端 | manual | 6d | 2019-09-12 A | 2019-09-20 |  | 90% | 0.6d |  |  | 习云芳 | 48h | 43.2h | 等待对接接口 |
| 11 | 1.2.1.4 | 3.3AP管理服务端 | manual | 7d | 2019-09-18 A | 2019-09-26 | 13 | 80% | 1.4d |  |  | 钟波 | 56h | 44.8h |  |
| 12 | 1.2.1.5 | 3.4AC管理前端 | manual | 3d | 2019-09-09 A | 2019-09-11 |  | 90% | 0.3d |  |  | 习云芳 | 24h | 21.6h | 等待对接接口 |
| 13 | 1.2.1.6 | 3.4AC管理服务端 | manual | 4d | 2019-09-11 A | 2019-09-17 |  | 95% | 0.2d |  |  | 钟波 | 32h | 30.4h | 自测报告_钟波.xlsx |
| 14 | 1.2.1.7 | 3.6DCME管理前端 | manual | 3d | 2019-09-23 A | 2019-09-25 | 10 | 80% | 0.6d |  |  | 习云芳 | 24h | 19.2h | 在对接接口 |
| 15 | 1.2.1.8 | 3.6DCME管理服务端 | manual | 3d | 2019-09-27 A | 2019-09-30 | 11 | 90% | 0.3d |  |  | 钟波 | 24h | 21.6h |  |
| 16 | 1.2.2 | **4.网络配置** |  | 12d | 2019-09-11 A | 2019-09-27 |  | 70% | 3.55d |  |  |  | 208h | 146.4h |  |
| 17 | 1.2.2.1 | 4.1无线网络配置前端 | manual | 4d | 2019-09-11 A | 2019-09-17 |  | 95% | 0.2d |  |  | 李文静 | 32h | 30.4h |  |
| 18 | 1.2.2.2 | 4.1无线网络配置服务端 | manual | 5d | 2019-09-11 A | 2019-09-18 |  | 80% | 1d |  |  | 孙杨寸 | 40h | 32h | 自测报告_网络配置.xlsx |
| 19 | 1.2.2.3 | **4.3认证配置** |  | 9d | 2019-09-17 | 2019-09-27 |  | 88% | 1.12d | 2019-09-18 |  |  | 96h | 84h |  |
| 20 | 1.2.2.3.1 | 4.3.1认证策略设置前端 | manual | 5d | 2019-09-18 A | 2019-09-24 | 17 | 90% | 0.5d |  |  | 李文静 | 40h | 36h |  |
| 21 | 1.2.2.3.2 | 4.3.1认证策略设置服务端 | manual | 4d | 2019-09-18 A | 2019-09-23 |  | 80% | 0.8d |  |  | 席晔文 | 32h | 25.6h | 自测报告_认证策略_后端 .xlsx |
| 22 | 1.2.2.3.3 | 4.3.4微信/短信设置前端 | manual | 2d | 2019-09-25 A | 2019-09-26 | 20 | 90% | 0.2d |  |  | 李文静 | 16h | 14.4h |  |
| 23 | 1.2.2.3.4 | 4.3.4微信/短信设置服务端 | manual | 1d | 2019-09-24 A | 2019-09-24 A |  | 100% |  |  |  | 席晔文 | 8h | 8h | 自测报告_短信微信配置_后端.xlsx |
| 24 | 1.2.2.4 | 4.4Portal认证页面缓存到设备 | manual | 5d | 2019-09-23 | 2019-09-27 |  |  |  |  |  | 聂军 | 40h |  |  |

Notes:
- 9: 还差上报下发
- 11: AP完成80%，目前在与前端联调，剩余20%主要是与上报下发接口对接部分
- 13: AC完成85%，剩余15%主要是与上报下发接口对接部分
- 17: 网络配置这一块 和别的 有联动 数据前后是 接通了 但是有的地方还没数据
- 18: 无线网络配置下发接口还没定，测的数据校验，数据库存储等逻辑
- 20: 网络策略都接通了 但是图片存在跨域问题 还有就是有前后台调控还有点问题 另外预览的东西 准备和portal一起弄
- 21: 还差上报下发
- 22: 9月26日完成

| ID | WBS | Task | Type | Duration | Start | Finish | Predecessors | Complete | Remaining | Actual start | Total slack | Free slack | Constraint | Resources | Work | Actual work | 输出物 |
| --- | --- | --- | --- | --- | --- | --- | --- | --- | --- | --- | --- | --- | --- | --- | --- | --- | --- |
| 25 | 1.2.3 | **5.用户Portal认证** |  | 18d | 2019-09-16 A | 2019-10-14 |  | 69% | 5.67d |  | 0d |  |  |  | 312h | 212.8h |  |
| 26 | 1.2.3.1 | 5.1账号认证5.2海报认证 （扫码认证）5.3短信认证5.4一键认证5.6微信公众号菜单认证5.7微信验证码认证5.9第三方Portal认证前端 | manual | 9d | 2019-09-27 A | 2019-10-14 | 22 | 80% | 1.8d |  |  |  |  | 李文静 | 72h | 57.6h |  |
| 27 | 1.2.3.2 | 5.1账号认证服务端 | manual | 3d | 2019-09-16 A | 2019-09-18 |  | 90% | 0.3d |  |  |  |  | 李斌; 顾勇 | 48h | 43.2h | 自测报告_portal认证_后端.xlsx |
| 28 | 1.2.3.3 | 5.2海报认证 （扫码认证）服务端 | manual | 3d | 2019-09-19 | 2019-09-23 |  |  |  |  |  |  |  | 李斌; 顾勇 | 48h |  |  |
| 29 | 1.2.3.4 | 5.3短信认证服务端 | manual | 3d | 2019-09-24 A | 2019-09-26 |  | 90% | 0.3d |  |  |  |  | 李斌; 顾勇 | 48h | 43.2h | 自测报告_portal认证_后端.xlsx |
| 30 | 1.2.3.5 | 5.4一键认证服务端 | manual | 3d | 2019-09-27 A | 2019-09-30 |  | 90% | 0.3d |  |  |  |  | 李斌; 顾勇 | 48h | 43.2h | 自测报告_portal认证_后端.xlsx |
| 31 | 1.2.3.6 | 5.6微信公众号菜单认证服务端 | manual | 2d | 2019-10-08 A | 2019-10-09 |  | 80% | 0.4d |  |  |  |  | 李斌 | 16h | 12.8h |  |
| 32 | 1.2.3.7 | 5.7微信验证码认证服务端 | manual | 2d | 2019-10-10 A | 2019-10-11 |  | 80% | 0.4d |  |  |  |  | 李斌 | 16h | 12.8h |  |
| 33 | 1.2.3.8 | 5.9第三方Portal认证服务端 | manual | 2d | 2019-10-12 | 2019-10-14 |  |  |  |  |  |  |  | 李斌 | 16h |  |  |
| 34 | 1.2.4 | **6.状态与监控** |  | 11d | 2019-09-18 | 2019-10-08 |  | 97% | 0.33d | 2019-09-19 |  |  |  |  | 80h | 77.6h |  |
| 35 | 1.2.4.1 | 6.1网络设备概况前端 | manual | 3d | 2019-09-26 A | 2019-09-29 A | 14 | 100% |  |  |  |  |  | 习云芳 | 24h | 24h |  |
| 36 | 1.2.4.2 | 6.1网络设备概况服务端 | manual | 2d | 2019-09-19 A | 2019-09-20 A | 18 | 100% |  |  |  |  |  | 孙杨寸 | 16h | 16h | 自测报告_网络状况.xlsx |
| 37 | 1.2.4.3 | 6.3日志管理前端 | manual | 3d | 2019-09-24 A | 2019-09-26 |  | 90% | 0.3d |  |  |  |  | 习云芳 | 24h | 21.6h | 等待对接接口 |
| 38 | 1.2.4.4 | 6.3日志管理服务端 | manual | 2d | 2019-09-30 A | 2019-10-08 A | 35 | 100% |  |  |  |  |  | 孙杨寸 | 16h | 16h | 自测报告_日志查询.xlsx |
| 39 | 1.2.5 | **统计分析** |  | 2d | 2019-10-09 A | 2019-10-10 |  | 33% | 1.33d |  | 0d |  |  |  | 24h | 8h |  |
| 40 | 1.2.5.1 | 在线用户列表服务端 | manual | 2d | 2019-10-09 A | 2019-10-10 |  | 50% | 1d |  |  |  |  | 孙杨寸 | 16h | 8h |  |
| 41 | 1.2.5.2 | 在线用户列表前端 | manual | 1d | 2019-10-09 | 2019-10-09 |  |  |  |  |  |  |  | 习云芳 | 8h |  |  |
| 42 | 1.2.6 | **服务框架** |  | 1d | 2019-10-14 | 2019-10-14 |  |  |  |  | 0d |  |  |  | 16h |  |  |
| 43 | 1.2.6.1 | 任务下发列表服务端 | manual | 1d | 2019-10-14 | 2019-10-14 |  |  |  |  |  |  |  | 孙杨寸 | 8h |  |  |
| 44 | 1.2.6.2 | 任务下发列表前端 | manual | 1d | 2019-10-14 | 2019-10-14 |  |  |  |  |  |  |  | 习云芳 | 8h |  |  |
| 45 | 1.2.7 | 数据上报 下发和Portal框架移植 | manual | 2d | 2019-09-16 A | 2019-09-17 A |  | 100% |  |  |  |  |  | 聂军 | 16h | 16h |  |
| 46 | 1.2.8 | 数据库设计 | manual | 2d | 2019-09-10 A | 2019-09-11 |  | 85% | 0.3d |  |  |  |  | 聂军 | 16h | 13.6h |  |
| 47 | 1.2.9 | 数据上报下发 | manual | 10d | 2019-09-25 A | 2019-10-12 |  | 70% | 3d |  |  |  |  | 席晔文 | 80h | 56h |  |
| 48 | 1.3 | **AC** |  | 20d? | 2019-09-09 A | 2019-10-12 |  | 52% | 9.6d? |  | 0d |  |  |  | 320h | 166.4h |  |
| 49 | 1.3.1 | **二级AC开发** |  | 15d? | 2019-09-09 A | 2019-09-30 |  | 69% | 4.6d? |  | 0d |  |  |  | 240h | 166.4h |  |
| 50 | 1.3.1.1 | **二级AC注册公有云** |  | 7d? | 2019-09-09 A | 2019-09-19 |  | 90% | 0.7d? |  | 0d |  |  | 李浩 | 56h | 50.4h |  |
| 51 | 1.3.1.1.1 | 二级AC访问公有云url |  | 3d | 2019-09-09 A | 2019-09-12 |  | 90% | 0.3d |  | 1.8d | 0d | start no earlier than 2019-09-09 |  |  |  |  |
| 52 | 1.3.1.1.2 | 二级AC接收并提取公有云回复的注册url |  | 2d? | 2019-09-12 A | 2019-09-17 | 51 | 90% | 0.2d? |  | 1.8d | 0d |  |  |  |  |  |
| 53 | 1.3.1.1.3 | 二级AC解析注册url，建立MQTT连接 |  | 2d? | 2019-09-17 A | 2019-09-19 | 52 | 90% | 0.2d? |  | 0d |  |  |  |  |  |  |

Notes:
- 26: 二维码的链接还不知道具体的是生成什么样的链接
- 40: 新增任务
- 41: 新增任务
- 43: 新增任务
- 44: 新增任务
- 51: 功能已开发完，无环境测试
- 52: 功能已开发完，无环境测试
- 53: 功能已开发完，无环境测试

| ID | WBS | Task | Type | Duration | Start | Finish | Predecessors | Complete | Remaining | Total slack | Free slack | Constraint | Resources | Work | Actual work |
| --- | --- | --- | --- | --- | --- | --- | --- | --- | --- | --- | --- | --- | --- | --- | --- |
| 54 | 1.3.1.2 | **二级AC首次配置下发** |  | 8d? | 2019-09-19 A | 2019-09-30 | 50 | 44% | 4.5d? | 0d |  |  | 李浩 | 64h | 28h |
| 55 | 1.3.1.2.1 | 二级AC首次连接清空配置 |  | 3d | 2019-09-19 A | 2019-09-24 A | 53 | 100% |  |  |  |  |  |  |  |
| 56 | 1.3.1.2.2 | 二级AC接收整体配置并解析生效 |  | 5d? | 2019-09-24 A | 2019-09-30 | 55 | 10% | 4.5d? | 0d |  |  |  |  |  |
| 57 | 1.3.1.3 | **二级AC接口调整** |  | 15d | 2019-09-09 A | 2019-09-30 |  | 73% | 4d | 0d |  |  | 刘星 | 120h | 88h |
| 58 | 1.3.1.3.1 | 公共接口实现 |  | 10d | 2019-09-09 A | 2019-09-24 |  | 70% | 3d | 4d | 0d | start no earlier than 2019-09-09 |  |  |  |
| 59 | 1.3.1.3.2 | 二级AC专有通信接口 |  | 5d | 2019-09-24 A | 2019-09-30 | 58 | 80% | 1d | 0d |  |  |  |  |  |
| 60 | 1.3.2 | **二级AC自测** |  | 5d | 2019-09-30 | 2019-10-12 | 49 |  |  |  |  |  |  | 80h |  |
| 61 | 1.3.2.1 | 二级AC注册公有云自测 |  | 3d | 2019-09-30 | 2019-10-10 | 56 |  |  | 0d |  |  | 李浩 | 24h |  |
| 62 | 1.3.2.2 | 二级AC上线配置下发自测 |  | 2d | 2019-10-10 | 2019-10-12 | 61 |  |  | 0d |  |  | 李浩 | 16h |  |
| 63 | 1.3.2.3 | 二级AC接口自测 |  | 5d | 2019-09-30 | 2019-10-12 | 59 |  |  | 0d |  |  | 刘星 | 40h |  |
| 64 | 1.4 | **DCME** |  | 57d | 2019-08-05 A | 2019-10-28 |  | 20% | 45.35d | 0d |  |  |  | 581.6h | 129.2h |
| 65 | 1.4.1 | **开发** |  | 48d | 2019-08-05 A | 2019-10-15 |  | 26% | 35.29d | 0d |  |  |  | 488h | 129.2h |
| 66 | 1.4.1.1 | mqtt、json、xml、设备配置、信息熟悉等先期工作 | manual | 23d | 2019-08-05 | 2019-09-04 |  |  |  |  |  |  | 周凡 | 184h |  |
| 67 | 1.4.1.2 | 代码基础结构，包含多线程、mqtt数据发送接收等 | manual | 6d | 2019-09-05 A | 2019-09-12 |  | 85% | 0.9d |  |  |  | 张璧 | 48h | 40.8h |
| 68 | 1.4.1.3 | 时钟同步、设备重新发现，定时更新 | manual | 6d | 2019-09-05 A | 2019-09-12 |  | 85% | 0.9d |  |  |  | 周凡 | 48h | 40.8h |
| 69 | 1.4.1.4 | 配置文件同步，无线网络配置下发 | manual | 5d | 2019-09-16 | 2019-09-20 |  |  |  |  |  |  | 周凡 | 40h |  |
| 70 | 1.4.1.5 | 设备发现，心跳，认证 | manual | 7d | 2019-09-16 A | 2019-09-24 |  | 85% | 1.05d |  |  |  | 张璧 | 56h | 47.6h |
| 71 | 1.4.1.6 | DCME上线、定时上报、ap定时上报、shell命令执行等 | manual | 7d | 2019-09-23 | 2019-09-30 |  |  |  |  |  |  | 周凡 | 56h |  |
| 72 | 1.4.1.7 | 自测所有功能点 | manual | 7d | 2019-10-08 | 2019-10-15 |  |  |  |  |  |  | 周凡 | 56h |  |
| 73 | 1.4.2 | **联调** |  | 9d | 2019-10-16 | 2019-10-28 |  |  |  | 0d |  |  |  | 93.6h |  |
| 74 | 1.4.2.1 | 设备发现和上线 | manual | 2d | 2019-10-16 | 2019-10-17 |  |  |  |  |  |  | 周凡 | 16h |  |
| 75 | 1.4.2.2 | 上报和配置下发 | manual | 4d | 2019-10-18 | 2019-10-23 |  |  |  |  |  |  | 周凡 | 32h |  |
| 76 | 1.4.2.3 | portal联调 | manual | 3d | 2019-10-24 | 2019-10-28 |  |  |  |  |  |  | 周凡 | 24h |  |
| 77 | 1.4.2.4 | 张璧协同配合周凡 | manual | 9d | 2019-10-16 | 2019-10-28 |  |  |  |  |  |  | 张璧 [30%] | 21.6h |  |

Notes:
- 55: 处理售后的bug还有售后的版本，耽误了时间投入
- 67: 基本都做完了。就是文档有一些修改，有一些要改
- 68: 基本都做完了。就是文档有一些修改，有一些要改
- 70: 基本都做完了。就是文档有一些修改，有一些要改

| ID | WBS | Task | Type | Duration | Start | Finish | Predecessors | Total slack | Resources | Work |
| --- | --- | --- | --- | --- | --- | --- | --- | --- | --- | --- |
| 78 | 1.5 | **集成联调** |  | 11d | 2019-10-14 | 2019-10-28 |  |  |  | 364h |
| 79 | 1.5.1 | **二级AC联调** |  | 10d | 2019-10-15 | 2019-10-28 |  | 0d |  | 296h |
| 80 | 1.5.1.1 | 设备发现和上线联调 | manual | 2d | 2019-10-15 | 2019-10-16 |  |  | 席晔文 [50%]; 李文静; 李浩 | 40h |
| 81 | 1.5.1.2 | 设备信息上报和配置下发联调 | manual | 3d | 2019-10-17 | 2019-10-21 |  |  | 李文静; 席晔文 [50%]; 李浩 | 60h |
| 82 | 1.5.1.3 | 无线网络配置下发联调 | manual | 2d | 2019-10-22 | 2019-10-23 |  |  | 李浩; 李文静; 席晔文 [50%] | 40h |
| 83 | 1.5.1.4 | 认证策略下发联调 | manual | 3d | 2019-10-24 | 2019-10-28 |  |  | 李浩; 李文静; 席晔文 [50%] | 60h |
| 84 | 1.5.1.5 | Portal联调 | manual | 6d | 2019-10-15 | 2019-10-22 |  |  | 李斌; 刘星 | 96h |
| 85 | 1.5.2 | **DCME联调** |  | 9d | 2019-10-16 | 2019-10-28 |  | 0d |  | 68h |
| 86 | 1.5.2.1 | 设备发现和上线 | manual | 2d | 2019-10-16 | 2019-10-17 |  |  | 席晔文 [50%] | 8h |
| 87 | 1.5.2.2 | 上报和配置下发 | manual | 7d | 2019-10-18 | 2019-10-28 |  |  | 席晔文 [50%] | 28h |
| 88 | 1.5.2.3 | Portal联调 | manual | 4d | 2019-10-23 | 2019-10-28 |  |  | 李斌 | 32h |
| 89 | 1.6 | **集成自测** |  | 9d | 2019-10-29 | 2019-11-08 | 78 |  |  | 468h |
| 90 | 1.6.1 | **自模块测试** |  | 5d | 2019-10-29 | 2019-11-04 |  | 0d |  | 276h |
| 91 | 1.6.1.1 | 日志管理和网络概述 | manual | 5d | 2019-10-29 | 2019-11-04 |  |  | 孙杨寸 [50%]; 李文静 [50%] | 40h |
| 92 | 1.6.1.2 | 设备管理 | manual | 5d | 2019-10-29 | 2019-11-04 |  |  | 习云芳; 钟波 [50%]; 席晔文 [30%] | 72h |
| 93 | 1.6.1.3 | Portal认证 | manual | 5d | 2019-10-29 | 2019-11-04 |  |  | 李斌; 顾勇 | 80h |
| 94 | 1.6.1.4 | 认证策略配置 | manual | 5d | 2019-10-29 | 2019-11-04 |  |  | 李文静 [50%]; 席晔文 [30%]; 钟波 [50%] | 52h |
| 95 | 1.6.1.5 | 无线网络配置 | manual | 5d | 2019-10-29 | 2019-11-04 |  |  | 席晔文 [30%]; 孙杨寸 [50%] | 32h |
| 96 | 1.6.2 | **交叉测试** |  | 4d | 2019-11-05 | 2019-11-08 |  | 0d |  | 192h |
| 97 | 1.6.2.1 | 日志管理和网络概述 | manual | 4d | 2019-11-05 | 2019-11-08 |  |  | 李文静 [50%]; 钟波 [50%] | 32h |
| 98 | 1.6.2.2 | 设备管理 | manual | 4d | 2019-11-05 | 2019-11-08 |  |  | 习云芳 [50%]; 席晔文 [50%] | 32h |
| 99 | 1.6.2.3 | Portal认证 | manual | 4d | 2019-11-05 | 2019-11-08 |  |  | 李斌; 顾勇 | 64h |
| 100 | 1.6.2.4 | 认证策略配置 | manual | 4d | 2019-11-05 | 2019-11-08 |  |  | 孙杨寸 [50%]; 习云芳 [50%] | 32h |
| 101 | 1.6.2.5 | 无线网络配置 | manual | 4d | 2019-11-05 | 2019-11-08 |  |  | 李文静 [50%]; 钟波 [50%] | 32h |
| 102 | 1.7 | 发布测试版本（tr4） | manual | 1d? | 2019-11-11 | 2019-11-11 | 89 |  |  |  |

| ID | WBS | Task | Type | Duration | Start | Finish | Predecessors | Total slack | Free slack | Constraint | Resources | Work |
| --- | --- | --- | --- | --- | --- | --- | --- | --- | --- | --- | --- | --- |
| 103 | 1.8 | **测试准备工作** |  | 63.5d? | 2019-09-05 | 2019-12-09 |  | 12d |  |  |  | 458h |
| 104 | 1.8.1 | 测试计划和测试策略撰写 |  | 5d | 2019-09-05 | 2019-09-11 |  | 12d |  |  | 严文会 | 40h |
| 105 | 1.8.2 | **功能测试方案撰写和评审** |  | 20.5d? | 2019-09-30 | 2019-11-01 | 104 | 0d |  |  |  | 258h |
| 106 | 1.8.2.1 | **设备管理** |  | 13.5d? | 2019-09-30 | 2019-10-23 |  | 0d |  |  |  | 108h |
| 107 | 1.8.2.1.1 | **设备管理前端** |  | 6d | 2019-09-30 | 2019-10-12 |  | 0d |  |  |  | 48h |
| 108 | 1.8.2.1.1.1 | AP管理前端 | manual | 1d | 2019-09-30 | 2019-09-30 |  |  |  |  | 刘江珊 | 8h |
| 109 | 1.8.2.1.1.2 | AP管理注册、上线、上报 | manual | 1d | 2019-10-08 | 2019-10-08 | 108 |  |  |  | 刘江珊 | 8h |
| 110 | 1.8.2.1.1.3 | AC管理前端 | manual | 1d | 2019-10-09 | 2019-10-09 | 109 |  |  |  | 刘江珊 | 8h |
| 111 | 1.8.2.1.1.4 | AC管理注册、上线、上报 | manual | 1d | 2019-10-10 | 2019-10-10 | 110 |  |  |  | 刘江珊 | 8h |
| 112 | 1.8.2.1.1.5 | DCME管理前端 | manual | 1d | 2019-10-11 | 2019-10-11 | 111 |  |  |  | 刘江珊 | 8h |
| 113 | 1.8.2.1.1.6 | DCME注册、上线、上报 | manual | 1d | 2019-10-12 | 2019-10-12 | 112 |  |  |  | 刘江珊 | 8h |
| 114 | 1.8.2.1.2 | **二级AC** |  | 2d | 2019-10-14 | 2019-10-15 |  |  |  |  |  | 16h |
| 115 | 1.8.2.1.2.1 | 二级AC注册公有云 | manual | 2d | 2019-10-14 | 2019-10-15 | 113 |  |  |  | 刘江珊 | 16h |
| 116 | 1.8.2.1.3 | **DCME** |  | 1d? | 2019-10-10 | 2019-10-11 |  |  |  |  |  | 28h |
| 117 | 1.8.2.1.3.1 | 时钟同步、设备重新发现，定时更新 | manual | 1.5d | 2019-10-16 | 2019-10-17 | 115 |  |  |  | 刘江珊 | 12h |
| 118 | 1.8.2.1.3.2 | DCME上线、定时上报、ap定时上报、shell命令执行等 | manual | 2d | 2019-10-17 | 2019-10-21 | 117 |  |  |  | 刘江珊 | 16h |
| 119 | 1.8.2.1.4 | AP、AC、DCME兼容性 | manual | 2d | 2019-10-21 | 2019-10-23 | 118 |  |  |  | 刘江珊 | 16h |
| 120 | 1.8.2.2 | **网络配置** |  | 6d? | 2019-09-30 | 2019-10-12 |  |  |  |  |  | 44h |
| 121 | 1.8.2.2.1 | 无线网络配置前端 | manual | 1.5d | 2019-09-30 | 2019-10-08 |  |  |  |  | 陈晶 | 12h |
| 122 | 1.8.2.2.2 | 二级AC网络配置下发、同步 | manual | 1d | 2019-10-08 | 2019-10-09 | 121 |  |  |  | 陈晶 | 8h |
| 123 | 1.8.2.2.3 | DCME无线网络配置下发、同步 | manual | 1d | 2019-10-09 | 2019-10-10 | 122 |  |  |  | 陈晶 | 8h |
| 124 | 1.8.2.2.4 | AP无线网络配置下发、同步 | manual | 0.5d | 2019-10-10 | 2019-10-10 | 123 |  |  |  | 陈晶 | 4h |
| 125 | 1.8.2.2.5 | 认证配置 | manual | 1.5d | 2019-10-11 | 2019-10-12 | 124 |  |  |  | 陈晶 | 12h |
| 126 | 1.8.2.3 | **portal认证** |  | 12d? | 2019-10-12 | 2019-10-28 |  |  |  |  |  | 88h |
| 127 | 1.8.2.3.1 | 账号认证 | manual | 1d | 2019-10-12 | 2019-10-14 | 125 |  |  |  | 陈晶 | 8h |
| 128 | 1.8.2.3.2 | 海报认证 （扫码认证） | manual | 1d | 2019-10-14 | 2019-10-15 | 127 |  |  |  | 陈晶 | 8h |
| 129 | 1.8.2.3.3 | 短信认证 | manual | 1d | 2019-10-15 | 2019-10-16 | 128 |  |  |  | 陈晶 | 8h |
| 130 | 1.8.2.3.4 | 一键认证 | manual | 1d | 2019-10-16 | 2019-10-17 | 129 |  |  |  | 陈晶 | 8h |
| 131 | 1.8.2.3.5 | 微信公众号菜单认证 | manual | 1d | 2019-10-17 | 2019-10-18 | 130 |  |  |  | 陈晶 | 8h |
| 132 | 1.8.2.3.6 | 微信验证码认证 | manual | 1d | 2019-10-18 | 2019-10-21 | 131 |  |  |  | 陈晶 | 8h |
| 133 | 1.8.2.3.7 | 第三方Portal认证 | manual | 1d | 2019-10-21 | 2019-10-22 | 132 |  |  |  | 陈晶 | 8h |
| 134 | 1.8.2.3.8 | 终端下线、无感知认证 | manual | 1d | 2019-10-22 | 2019-10-23 | 133 |  |  |  | 陈晶 | 8h |
| 135 | 1.8.2.3.9 | Portal认证页面缓存到设备 | manual | 1d | 2019-10-23 | 2019-10-24 | 134 |  |  |  | 陈晶 | 8h |
| 136 | 1.8.2.3.10 | AP、AC、DCME兼容性 | manual | 1d | 2019-10-24 | 2019-10-25 | 135 |  |  |  | 陈晶 | 8h |
| 137 | 1.8.2.3.11 | 终端兼容性 | manual | 1d | 2019-10-25 | 2019-10-28 | 136 |  |  |  | 陈晶 | 8h |
| 138 | 1.8.2.4 | 状态与监控 |  | 1d | 2019-10-28 | 2019-10-28 |  | 43d | 0d | start no earlier than 2019-10-28 | 付培胜 [50%] | 4h |
| 139 | 1.8.2.5 | 日志管理 | manual | 1.5d | 2019-10-29 | 2019-10-30 | 138 |  |  |  | 付培胜 [50%] | 6h |
| 140 | 1.8.2.6 | 告警通知 | manual | 1d | 2019-10-30 | 2019-10-31 | 139 |  |  |  | 付培胜 [50%] | 4h |
| 141 | 1.8.2.7 | 软件国际化 | manual | 1d | 2019-10-31 | 2019-11-01 | 140 |  |  |  | 付培胜 [50%] | 4h |
| 142 | 1.8.3 | 准入测试方案 |  | 1d | 2019-11-04 | 2019-11-04 |  | 46.5d |  | start no earlier than 2019-11-04 | 刘江珊 | 8h |
| 143 | 1.8.4 | 集成测试方案撰写和评审 |  | 5d | 2019-12-02 | 2019-12-09 | 141, 172, 210 | 22d |  |  | 付培胜 | 40h |
| 144 | 1.8.5 | 性能测试方案撰写和测试手段调研 |  | 3d | 2019-09-05 | 2019-09-09 |  | 71.5d | 18d |  | 黄淼森 | 24h |
| 145 | 1.8.6 | 测试环境搭建和相关测试设备的准备 |  | 3d | 2019-10-11 | 2019-10-14 | 144 | 53.5d | 0d | start no earlier than 2019-10-11 | 严文会 | 24h |
| 146 | 1.8.7 | 接口功能录制和预测试（后期利用jemeter进行接口回归） |  | 8d | 2019-10-15 | 2019-10-24 | 145 | 53.5d |  |  | 黄淼森 | 64h |

| ID | WBS | Task | Type | Duration | Start | Finish | Predecessors | Total slack | Free slack | Resources | Work |
| --- | --- | --- | --- | --- | --- | --- | --- | --- | --- | --- | --- |
| 147 | 1.9 | **功能测试** |  | 26d | 2019-11-12 | 2019-12-17 |  | 0d |  |  | 472h |
| 148 | 1.9.1 | **第一轮功能测试** |  | 14d | 2019-11-12 | 2019-11-29 |  |  |  |  | 472h |
| 149 | 1.9.1.1 | 账号注册登录和权限管理模块（涵盖账号管理/企业站点管理/管理员/用户管理） |  | 4d | 2019-11-12 | 2019-11-15 |  | 4d | 0d | 黄淼森 | 32h |
| 150 | 1.9.1.2 | 账号注册登录和权限管理模块（涵盖账号管理/企业站点管理/管理员/用户管理） |  | 2d | 2019-11-18 | 2019-11-19 | 149 | 4d | 0d | 黄淼森 | 16h |
| 151 | 1.9.1.3 | 账号注册登录和权限管理模块Bug回归和测试报告撰写 |  | 2d | 2019-11-20 | 2019-11-21 | 150 | 4d |  | 黄淼森 | 16h |
| 152 | 1.9.1.4 | **设备管理** |  | 8d? | 2019-11-12 | 2019-11-21 |  |  |  |  | 64h |
| 153 | 1.9.1.4.1 | **设备管理前端** |  | 5d? | 2019-11-12 | 2019-11-18 |  |  |  |  | 36h |
| 154 | 1.9.1.4.1.1 | AP管理前端 | manual | 0.5d | 2019-11-12 | 2019-11-12 |  |  |  | 刘江珊 | 4h |
| 155 | 1.9.1.4.1.2 | AP管理注册、上线、上报 | manual | 1d | 2019-11-12 | 2019-11-13 | 154 |  |  | 刘江珊 | 8h |
| 156 | 1.9.1.4.1.3 | AC管理前端 | manual | 0.5d | 2019-11-13 | 2019-11-13 | 155 |  |  | 刘江珊 | 4h |
| 157 | 1.9.1.4.1.4 | AC管理注册、上线、上报 | manual | 1d | 2019-11-14 | 2019-11-14 | 156 |  |  | 刘江珊 | 8h |
| 158 | 1.9.1.4.1.5 | DCME管理前端 | manual | 0.5d | 2019-11-15 | 2019-11-15 | 157 |  |  | 刘江珊 | 4h |
| 159 | 1.9.1.4.1.6 | DCME注册、上线、上报 | manual | 1d | 2019-11-15 | 2019-11-18 | 158 |  |  | 刘江珊 | 8h |
| 160 | 1.9.1.4.2 | **二级AC** |  | 2d? | 2019-11-12 | 2019-11-13 |  |  |  |  | 8h |
| 161 | 1.9.1.4.2.1 | 二级AC注册公有云 | manual | 1d | 2019-11-18 | 2019-11-19 | 159 |  |  | 刘江珊 | 8h |
| 162 | 1.9.1.4.3 | **DCME** |  | 2d? | 2019-11-19 | 2019-11-20 |  |  |  |  | 12h |
| 163 | 1.9.1.4.3.1 | 时钟同步、设备重新发现，定时更新 | manual | 0.5d | 2019-11-19 | 2019-11-19 | 161 |  |  | 刘江珊 | 4h |
| 164 | 1.9.1.4.3.2 | DCME上线、定时上报、ap定时上报、shell命令执行等 | manual | 1d | 2019-11-20 | 2019-11-20 | 163 |  |  | 刘江珊 | 8h |
| 165 | 1.9.1.4.4 | AP、AC、DCME兼容性 | manual | 1d | 2019-11-21 | 2019-11-21 | 164 |  |  | 刘江珊 | 8h |
| 166 | 1.9.1.5 | **网络配置** |  | 4d? | 2019-11-22 | 2019-11-27 |  |  |  |  | 32h |
| 167 | 1.9.1.5.1 | 无线网络配置前端 | manual | 0.5d | 2019-11-22 | 2019-11-22 | 165 |  |  | 刘江珊 | 4h |
| 168 | 1.9.1.5.2 | 二级AC网络配置下发、同步 | manual | 0.5d | 2019-11-22 | 2019-11-22 | 167 |  |  | 刘江珊 | 4h |
| 169 | 1.9.1.5.3 | DCME无线网络配置下发、同步 | manual | 0.5d | 2019-11-25 | 2019-11-25 | 168 |  |  | 刘江珊 | 4h |
| 170 | 1.9.1.5.4 | AP无线网络配置下发、同步 | manual | 0.5d | 2019-11-25 | 2019-11-25 | 169 |  |  | 刘江珊 | 4h |
| 171 | 1.9.1.5.5 | 认证配置 | manual | 1d | 2019-11-26 | 2019-11-26 | 170 |  |  | 刘江珊 | 8h |
| 172 | 1.9.1.5.6 | 软件国际化 | manual | 1d | 2019-11-27 | 2019-11-27 | 171 |  |  | 刘江珊 | 8h |

| ID | WBS | Task | Type | Duration | Start | Finish | Predecessors | Total slack | Resources | Work |
| --- | --- | --- | --- | --- | --- | --- | --- | --- | --- | --- |
| 173 | 1.9.1.6 | **portal认证** |  | 10d? | 2019-11-12 | 2019-11-25 |  |  |  | 80h |
| 174 | 1.9.1.6.1 | 账号认证 | manual | 1d | 2019-11-12 | 2019-11-12 |  |  | 陈晶 | 8h |
| 175 | 1.9.1.6.2 | 海报认证 （扫码认证） | manual | 1d | 2019-11-13 | 2019-11-13 | 174 |  | 陈晶 | 8h |
| 176 | 1.9.1.6.3 | 短信认证 | manual | 0.5d | 2019-11-14 | 2019-11-14 | 175 |  | 陈晶 | 4h |
| 177 | 1.9.1.6.4 | 一键认证 | manual | 0.5d | 2019-11-14 | 2019-11-14 | 176 |  | 陈晶 | 4h |
| 178 | 1.9.1.6.5 | 微信公众号菜单认证 | manual | 1d | 2019-11-15 | 2019-11-15 | 177 |  | 陈晶 | 8h |
| 179 | 1.9.1.6.6 | 微信验证码认证 | manual | 1d | 2019-11-18 | 2019-11-18 | 178 |  | 陈晶 | 8h |
| 180 | 1.9.1.6.7 | 第三方Portal认证 | manual | 1d | 2019-11-19 | 2019-11-19 | 179 |  | 陈晶 | 8h |
| 181 | 1.9.1.6.8 | 终端下线、无感知认证 | manual | 1.5d | 2019-11-20 | 2019-11-21 | 180 |  | 陈晶 | 12h |
| 182 | 1.9.1.6.9 | Portal认证页面缓存到设备 | manual | 0.5d | 2019-11-21 | 2019-11-21 | 181 |  | 陈晶 | 4h |
| 183 | 1.9.1.6.10 | AP、AC、DCME兼容性 | manual | 1d | 2019-11-22 | 2019-11-22 | 182 |  | 陈晶 | 8h |
| 184 | 1.9.1.6.11 | 终端兼容性 | manual | 1d | 2019-11-25 | 2019-11-25 | 183 |  | 陈晶 | 8h |
| 185 | 1.9.1.7 | 状态与监控 |  | 0.5d? | 2019-11-26 | 2019-11-26 | 184 | 0d | 陈晶 | 4h |
| 186 | 1.9.1.8 | 日志管理 | manual | 1d | 2019-11-26 | 2019-11-27 | 185 |  | 陈晶 | 8h |
| 187 | 1.9.1.9 | 告警通知 | manual | 0.5d | 2019-11-27 | 2019-11-27 | 186 |  | 陈晶 | 4h |
| 188 | 1.9.1.10 | bug检验和版本发布 | manual | 2d | 2019-11-28 | 2019-11-29 | 187 |  | 刘江珊; 陈晶 | 32h |
| 189 | 1.9.1.11 | **第二轮功能测试** |  | 12d | 2019-12-02 | 2019-12-17 |  |  |  | 184h |
| 190 | 1.9.1.11.1 | **设备管理** |  | 7d? | 2019-12-02 | 2019-12-10 |  |  |  | 52h |
| 191 | 1.9.1.11.1.1 | **设备管理前端** |  | 3d? | 2019-12-02 | 2019-12-04 |  |  |  | 24h |
| 192 | 1.9.1.11.1.1.1 | AP管理前端 | manual | 0.5d | 2019-12-02 | 2019-12-02 | 188 |  | 陈晶 | 4h |
| 193 | 1.9.1.11.1.1.2 | AP管理注册、上线、上报 | manual | 0.5d | 2019-12-02 | 2019-12-02 | 192 |  | 陈晶 | 4h |
| 194 | 1.9.1.11.1.1.3 | AC管理前端 | manual | 0.5d | 2019-12-03 | 2019-12-03 | 193 |  | 陈晶 | 4h |
| 195 | 1.9.1.11.1.1.4 | AC管理注册、上线、上报 | manual | 0.5d | 2019-12-03 | 2019-12-03 | 194 |  | 陈晶 | 4h |
| 196 | 1.9.1.11.1.1.5 | DCME管理前端 | manual | 0.5d | 2019-12-04 | 2019-12-04 | 195 |  | 陈晶 | 4h |
| 197 | 1.9.1.11.1.1.6 | DCME注册、上线、上报 | manual | 0.5d | 2019-12-04 | 2019-12-04 | 196 |  | 陈晶 | 4h |

| ID | WBS | Task | Type | Duration | Start | Finish | Predecessors | Total slack | Resources | Work |
| --- | --- | --- | --- | --- | --- | --- | --- | --- | --- | --- |
| 198 | 1.9.1.11.1.2 | **二级AC** |  | 2d? | 2019-12-02 | 2019-12-03 |  |  |  | 8h |
| 199 | 1.9.1.11.1.2.1 | 二级AC注册公有云 | manual | 1d | 2019-12-05 | 2019-12-05 | 197 |  | 陈晶 | 8h |
| 200 | 1.9.1.11.1.3 | **DCME** |  | 2d? | 2019-12-06 | 2019-12-09 |  |  |  | 12h |
| 201 | 1.9.1.11.1.3.1 | 时钟同步、设备重新发现，定时更新 | manual | 0.5d | 2019-12-06 | 2019-12-06 | 199 |  | 陈晶 | 4h |
| 202 | 1.9.1.11.1.3.2 | DCME上线、定时上报、ap定时上报、shell命令执行等 | manual | 1d | 2019-12-06 | 2019-12-09 | 201 |  | 陈晶 | 8h |
| 203 | 1.9.1.11.1.4 | AP、AC、DCME兼容性 | manual | 1d | 2019-12-09 | 2019-12-10 | 202 |  | 陈晶 | 8h |
| 204 | 1.9.1.11.2 | **网络配置** |  | 4d? | 2019-12-10 | 2019-12-13 |  |  |  | 24h |
| 205 | 1.9.1.11.2.1 | 无线网络配置前端 | manual | 0.5d | 2019-12-10 | 2019-12-10 | 203 |  | 陈晶 | 4h |
| 206 | 1.9.1.11.2.2 | 二级AC网络配置下发、同步 | manual | 0.5d | 2019-12-11 | 2019-12-11 | 205 |  | 陈晶 | 4h |
| 207 | 1.9.1.11.2.3 | DCME无线网络配置下发、同步 | manual | 0.5d | 2019-12-11 | 2019-12-11 | 206 |  | 陈晶 | 4h |
| 208 | 1.9.1.11.2.4 | AP无线网络配置下发、同步 | manual | 0.5d | 2019-12-12 | 2019-12-12 | 207 |  | 陈晶 | 4h |
| 209 | 1.9.1.11.2.5 | 认证配置 | manual | 1d | 2019-12-12 | 2019-12-13 | 208 |  | 陈晶 | 8h |
| 210 | 1.9.1.11.3 | 软件国际化 | manual | 0.5d | 2019-12-02 | 2019-12-02 | 188 |  | 刘江珊 | 4h |
| 211 | 1.9.1.11.4 | **portal认证** |  | 7d | 2019-12-04 | 2019-12-12 |  |  |  | 64h |
| 212 | 1.9.1.11.4.1 | 账号认证 | manual | 1d | 2019-12-02 | 2019-12-03 | 210 |  | 刘江珊 | 8h |
| 213 | 1.9.1.11.4.2 | 海报认证 （扫码认证） | manual | 0.5d | 2019-12-03 | 2019-12-03 | 212 |  | 刘江珊 | 4h |
| 214 | 1.9.1.11.4.3 | 短信认证 | manual | 0.5d | 2019-12-04 | 2019-12-04 | 213 |  | 刘江珊 | 4h |
| 215 | 1.9.1.11.4.4 | 一键认证 | manual | 0.5d | 2019-12-04 | 2019-12-04 | 214 |  | 刘江珊 | 4h |
| 216 | 1.9.1.11.4.5 | 微信公众号菜单认证 | manual | 0.5d | 2019-12-05 | 2019-12-05 | 215 |  | 刘江珊 | 4h |
| 217 | 1.9.1.11.4.6 | 微信验证码认证 | manual | 0.5d | 2019-12-05 | 2019-12-05 | 216 |  | 刘江珊 | 4h |
| 218 | 1.9.1.11.4.7 | 第三方Portal认证 | manual | 1d | 2019-12-06 | 2019-12-06 | 217 |  | 刘江珊 | 8h |
| 219 | 1.9.1.11.4.8 | 终端下线、无感知认证 | manual | 1d | 2019-12-09 | 2019-12-09 | 218 |  | 刘江珊 | 8h |
| 220 | 1.9.1.11.4.9 | Portal认证页面缓存到设备 | manual | 0.5d | 2019-12-10 | 2019-12-10 | 219 |  | 刘江珊 | 4h |
| 221 | 1.9.1.11.4.10 | AP、AC、DCME兼容性 | manual | 1d | 2019-12-10 | 2019-12-11 | 220 |  | 刘江珊 | 8h |
| 222 | 1.9.1.11.4.11 | 终端兼容性 | manual | 1d | 2019-12-11 | 2019-12-12 | 221 |  | 刘江珊 | 8h |
| 223 | 1.9.1.11.5 | 状态与监控 |  | 0.5d? | 2019-12-12 | 2019-12-12 | 222 | 0d | 刘江珊 | 4h |
| 224 | 1.9.1.11.6 | 日志管理 | manual | 0.5d | 2019-12-13 | 2019-12-13 | 223 |  | 刘江珊 | 4h |
| 225 | 1.9.1.11.7 | bug回归和版本发布 | manual | 2d | 2019-12-13 | 2019-12-17 | 224 |  | 刘江珊; 陈晶 | 32h |

| ID | WBS | Task | Duration | Start | Finish | Predecessors | Total slack | Resources | Work | 输出物 |
| --- | --- | --- | --- | --- | --- | --- | --- | --- | --- | --- |
| 226 | 1.10 | **性能测试** | 10d | 2019-11-28 | 2019-12-11 |  |  |  | 80h | 性能测试报告 |
| 227 | 1.10.1 | 性能测试第一轮 | 6d | 2019-11-28 | 2019-12-05 | 151 | 0d | 黄淼森 | 48h |  |
| 228 | 1.10.2 | 性能测试第二轮 | 3d | 2019-12-06 | 2019-12-10 | 227 | 0d | 黄淼森 | 24h |  |
| 229 | 1.10.3 | 性能测试回归和测试报告撰写 | 1d | 2019-12-11 | 2019-12-11 | 228 | 0d | 黄淼森 | 8h |  |
| 230 | 1.11 | **集成测试** | 11d | 2019-12-17 | 2020-01-01 |  | 0d | 所有 | 88h |  |
| 231 | 1.11.1 | 第一轮集成测试 | 5d | 2019-12-17 | 2019-12-24 | 225 | 0d |  |  | 第一轮集成测试报告 |
| 232 | 1.11.2 | 第二轮集成测试 | 5d | 2019-12-24 | 2019-12-31 | 231 | 0d |  |  | 第二轮集成测试报告 |
| 233 | 1.11.3 | 集成测试bug回归和报告撰写 | 1d | 2019-12-31 | 2020-01-01 | 232 | 0d |  |  |  |
| 234 | 1.12 | **确认测试** | 5d | 2020-01-01 | 2020-01-08 |  | 0d |  | 80h |  |
| 235 | 1.12.1 | 确认测试第一轮功能测试 | 2d | 2020-01-01 | 2020-01-03 | 233 | 0d | 陈晶; 刘江珊 | 32h |  |
| 236 | 1.12.2 | 确认测试bug回归和报告撰写 | 1d | 2020-01-03 | 2020-01-06 | 235 | 0d | 陈晶; 刘江珊 | 16h | 确认测试报告 |
| 237 | 1.12.3 | 确认测试第二轮功能测试 | 2d | 2020-01-06 | 2020-01-08 | 236 | 0d | 陈晶; 刘江珊 | 32h | 确认测试报告 |
