# netcollege开发计划

Schedule from MS Project, 2019-09-11 to 2020-01-15, A marks actual dates.

## Calendars

- 标准: Mon-Fri 08:00-12:00, 13:00-17:00; Sat-Sun off. Exceptions (off unless hours are given): 2019-09-13 to 2019-09-15 (中秋节), 2019-09-29 08:00-12:00, 13:00-17:00 (国庆调整工作日9.29), 2019-10-01 to 2019-10-07 (国庆), 2019-10-12 08:00-12:00, 13:00-17:00 (国庆调整工作日10.12).

## Resources

| Resource |
| --- |
| 开分人员 |
| 冯雷 |
| 王战永 |
| 刘江珊 |
| 张幽雅 |
| 付培胜 |
| fenglei |
| wangzy |
| guominf |
| 陈珊珊 |

## Schedule

| ID | WBS | Task | Duration | Start | Finish | Predecessors | Complete | Remaining | Total slack | Resources | Work | Actual work |
| --- | --- | --- | --- | --- | --- | --- | --- | --- | --- | --- | --- | --- |
| 1 | 1 | **netcollege开发** | 65.29d | 2019-09-11 08:00 A | 2019-12-17 10:19 |  | 36% | 41.95d | 21.71d |  | 786.29h | 290.26h |
| 2 | 1.1 | **开发准备/代码分析** | 6d | 2019-09-11 08:00 A | 2019-09-19 17:00 A |  | 100% |  |  |  | 100h | 100h |
| 3 | 1.1.1 | 建立代码版本控制git仓库 | 0.5d | 2019-09-12 08:00 A | 2019-09-12 12:00 A |  | 100% |  |  | 冯雷 | 4h | 4h |
| 4 | 1.1.2 | 分析研究代码结构 | 4d | 2019-09-11 08:00 A | 2019-09-17 17:00 A |  | 100% |  |  | 冯雷; 王战永 | 64h | 64h |
| 5 | 1.1.3 | 导入前端框架依赖js/css/font/创建新界面layout/header/footer/menu | 2d | 2019-09-18 08:00 A | 2019-09-19 17:00 A | 4 | 100% |  |  | 冯雷; 王战永 | 32h | 32h |
| 6 | 1.2 | **后台功能** | 40.01d | 2019-09-20 08:00 A | 2019-11-20 08:02 |  | 42% | 23.26d | 22.26d |  | 462.26h | 190.26h |
| 7 | 1.2.1 | 后台首页 | 0.56d | 2019-09-20 08:00 A | 2019-09-20 13:26 A | 5 | 100% |  |  | 冯雷 [90%] | 4h | 4h |
| 8 | 1.2.2 | **设备管理** | 9.53d | 2019-09-20 08:00 A | 2019-10-09 13:15 A |  | 100% |  |  |  | 98.26h | 98.26h |
| 9 | 1.2.2.1 | **实验设备管理** | 3.98d | 2019-09-20 13:26 A | 2019-09-26 13:14 A |  | 100% |  |  |  | 22.26h | 22.26h |
| 10 | 1.2.2.1.1 | 实验设备列表 | 0.79d | 2019-09-20 13:26 A | 2019-09-23 10:47 A | 7 | 100% |  |  | 王战永 [70%] | 4.45h | 4.45h |
| 11 | 1.2.2.1.2 | 新增实验设备 | 0.79d | 2019-09-23 10:47 A | 2019-09-24 09:08 A | 10 | 100% |  |  | 王战永 [70%] | 4.45h | 4.45h |
| 12 | 1.2.2.1.3 | 查看设备状态 | 0.79d | 2019-09-24 09:08 A | 2019-09-24 16:29 A | 11 | 100% |  |  | 王战永 [70%] | 4.45h | 4.45h |
| 13 | 1.2.2.1.4 | 编辑实验设备 | 0.8d | 2019-09-24 16:29 A | 2019-09-25 14:53 A | 12 | 100% |  |  | 王战永 [70%] | 4.48h | 4.48h |
| 14 | 1.2.2.1.5 | 删除实验设备 | 0.79d | 2019-09-25 14:53 A | 2019-09-26 13:14 A | 13 | 100% |  |  | 王战永 [70%] | 4.45h | 4.45h |
| 15 | 1.2.2.2 | **设备类别设置** | 2.86d | 2019-09-20 08:00 A | 2019-09-24 15:51 A |  | 100% |  |  |  | 16h | 16h |
| 16 | 1.2.2.2.1 | 设备类别列表 | 0.71d | 2019-09-20 08:00 A | 2019-09-20 14:42 A | 5 | 100% |  |  | 王战永 [70%] | 4h | 4h |
| 17 | 1.2.2.2.2 | 新建设备类别 | 0.71d | 2019-09-20 14:42 A | 2019-09-23 11:25 A | 16 | 100% |  |  | 王战永 [70%] | 4h | 4h |
| 18 | 1.2.2.2.3 | 编辑设备类别 | 0.71d | 2019-09-23 11:25 A | 2019-09-24 09:08 A | 17 | 100% |  |  | 王战永 [70%] | 4h | 4h |
| 19 | 1.2.2.2.4 | 删除设备类别 | 0.71d | 2019-09-24 09:08 A | 2019-09-24 15:51 A | 18 | 100% |  |  | 王战永 [70%] | 4h | 4h |
| 20 | 1.2.2.3 | **设备型号管理** | 2.22d | 2019-09-26 13:14 A | 2019-09-29 15:01 A |  | 100% |  |  |  | 16h | 16h |
| 21 | 1.2.2.3.1 | 设备型号列表 | 0.56d | 2019-09-26 13:14 A | 2019-09-27 08:41 A | 14 | 100% |  |  | 冯雷 [90%] | 4h | 4h |
| 22 | 1.2.2.3.2 | 新建设备型号 | 0.56d | 2019-09-27 08:41 A | 2019-09-27 14:08 A | 21 | 100% |  |  | 冯雷 [90%] | 4h | 4h |
| 23 | 1.2.2.3.3 | 编辑设备型号 | 0.56d | 2019-09-27 14:08 A | 2019-09-29 09:34 A | 22 | 100% |  |  | 冯雷 [90%] | 4h | 4h |
| 24 | 1.2.2.3.4 | 删除设备型号 | 0.56d | 2019-09-29 09:34 A | 2019-09-29 15:01 A | 23 | 100% |  |  | 冯雷 [90%] | 4h | 4h |

| ID | WBS | Task | Duration | Start | Finish | Predecessors | Complete | Resources | Work | Actual work |
| --- | --- | --- | --- | --- | --- | --- | --- | --- | --- | --- |
| 25 | 1.2.2.4 | **设备命令过滤** | 4.29d | 2019-09-24 15:51 A | 2019-09-30 09:09 A |  | 100% |  | 24h | 24h |
| 26 | 1.2.2.4.1 | 设备命令列表 | 0.71d | 2019-09-24 15:51 A | 2019-09-25 13:34 A | 19 | 100% | 王战永 [70%] | 4h | 4h |
| 27 | 1.2.2.4.2 | 添加过滤指令-新增禁止指令例外参数 | 0.71d | 2019-09-25 13:34 A | 2019-09-26 10:17 A | 26 | 100% | 王战永 [70%] | 4h | 4h |
| 28 | 1.2.2.4.3 | 查看禁止指令例外参数-编辑例外参数 | 0.71d | 2019-09-26 10:17 A | 2019-09-27 08:00 A | 27 | 100% | 王战永 [70%] | 4h | 4h |
| 29 | 1.2.2.4.4 | 查看禁止指令例外参数-删除列外参数 | 0.71d | 2019-09-27 08:00 A | 2019-09-27 14:43 A | 28 | 100% | 王战永 [70%] | 4h | 4h |
| 30 | 1.2.2.4.5 | 编辑命令-新增禁止指令例外参数 | 0.71d | 2019-09-27 14:43 A | 2019-09-29 11:26 A | 29 | 100% | 王战永 [70%] | 4h | 4h |
| 31 | 1.2.2.4.6 | 删除命令 | 0.71d | 2019-09-29 11:26 A | 2019-09-30 09:09 A | 30 | 100% | 王战永 [70%] | 4h | 4h |
| 32 | 1.2.2.5 | **虚拟化设备管理** | 2.78d | 2019-09-29 15:01 A | 2019-10-09 13:15 A |  | 100% |  | 20h | 20h |
| 33 | 1.2.2.5.1 | 虚拟化设备列表 | 0.56d | 2019-09-29 15:01 A | 2019-09-30 10:28 A | 24 | 100% | 冯雷 [90%] | 4h | 4h |
| 34 | 1.2.2.5.2 | 新增虚拟化设备 | 0.56d | 2019-09-30 10:28 A | 2019-09-30 15:54 A | 33 | 100% | 冯雷 [90%] | 4h | 4h |
| 35 | 1.2.2.5.3 | 查看虚拟系统-新增虚拟系统 | 0.56d | 2019-09-30 15:54 A | 2019-10-08 11:21 A | 34 | 100% | 冯雷 [90%] | 4h | 4h |
| 36 | 1.2.2.5.4 | 编辑虚拟化设备 | 0.56d | 2019-10-08 11:21 A | 2019-10-08 16:48 A | 35 | 100% | 冯雷 [90%] | 4h | 4h |
| 37 | 1.2.2.5.5 | 删除虚拟化设备 | 0.56d | 2019-10-08 16:48 A | 2019-10-09 13:15 A | 36 | 100% | 冯雷 [90%] | 4h | 4h |
| 38 | 1.2.3 | **实验室管理** | 9.29d | 2019-09-30 09:09 A | 2019-10-17 11:26 A |  | 100% |  | 88h | 88h |
| 39 | 1.2.3.1 | **实验室管理** | 9.29d | 2019-09-30 09:09 A | 2019-10-17 11:26 A |  | 100% |  | 52h | 52h |
| 40 | 1.2.3.1.1 | 实验室列表 | 0.71d | 2019-09-30 09:09 A | 2019-09-30 15:51 A | 31 | 100% | 王战永 [70%] | 4h | 4h |
| 41 | 1.2.3.1.2 | 新建实验室 | 0.71d | 2019-09-30 15:51 A | 2019-10-08 13:34 A | 40 | 100% | 王战永 [70%] | 4h | 4h |
| 42 | 1.2.3.1.3 | 查看实验组-新建实验组 | 0.71d | 2019-10-08 13:34 A | 2019-10-09 10:17 A | 41 | 100% | 王战永 [70%] | 4h | 4h |
| 43 | 1.2.3.1.4 | 查看实验组-克隆实验组 | 0.71d | 2019-10-09 10:17 A | 2019-10-10 08:00 A | 42 | 100% | 王战永 [70%] | 4h | 4h |
| 44 | 1.2.3.1.5 | 查看实验组-查看拥有设备-查看设备状态 | 0.71d | 2019-10-10 08:00 A | 2019-10-10 14:43 A | 43 | 100% | 王战永 [70%] | 4h | 4h |
| 45 | 1.2.3.1.6 | 查看实验组-查看拥有设备-编辑设备信息 | 0.71d | 2019-10-10 14:43 A | 2019-10-11 11:26 A | 44 | 100% | 王战永 [70%] | 4h | 4h |
| 46 | 1.2.3.1.7 | 查看实验组-查看拥有设备-删除设备 | 0.71d | 2019-10-11 11:26 A | 2019-10-12 09:09 A | 45 | 100% | 王战永 [70%] | 4h | 4h |
| 47 | 1.2.3.1.8 | 查看实验组-查看拥有设备-安排实验用户-实验用户列表 | 0.71d | 2019-10-12 09:09 A | 2019-10-12 15:52 A | 46 | 100% | 王战永 [70%] | 4h | 4h |
| 48 | 1.2.3.1.9 | 查看实验组-查看拥有设备-安排实验用户-安排实验用户 | 0.71d | 2019-10-12 15:52 A | 2019-10-14 13:35 A | 47 | 100% | 王战永 [70%] | 4h | 4h |
| 49 | 1.2.3.1.10 | 查看实验组-编辑实验组 | 0.71d | 2019-10-14 13:35 A | 2019-10-15 10:18 A | 48 | 100% | 王战永 [70%] | 4h | 4h |
| 50 | 1.2.3.1.11 | 查看实验组-删除实验组 | 0.71d | 2019-10-15 10:18 A | 2019-10-16 08:00 A | 49 | 100% | 王战永 [70%] | 4h | 4h |
| 51 | 1.2.3.1.12 | 编辑实验室 | 0.71d | 2019-10-16 08:00 A | 2019-10-16 14:43 A | 50 | 100% | 王战永 [70%] | 4h | 4h |
| 52 | 1.2.3.1.13 | 删除实验室 | 0.71d | 2019-10-16 14:43 A | 2019-10-17 11:26 A | 51 | 100% | 王战永 [70%] | 4h | 4h |

| ID | WBS | Task | Duration | Start | Finish | Predecessors | Complete | Total slack | Free slack | Resources | Work | Actual work |
| --- | --- | --- | --- | --- | --- | --- | --- | --- | --- | --- | --- | --- |
| 53 | 1.2.3.2 | **底层设备控制模块** | 2.78d | 2019-10-09 13:15 A | 2019-10-12 10:28 A |  | 100% |  |  |  | 20h | 20h |
| 54 | 1.2.3.2.1 | 底层设备控制模块列表 | 0.56d | 2019-10-09 13:15 A | 2019-10-10 08:41 A | 37 | 100% |  |  | 冯雷 [90%] | 4h | 4h |
| 55 | 1.2.3.2.2 | 新增底层设备控制模块 | 0.56d | 2019-10-10 08:41 A | 2019-10-10 14:08 A | 54 | 100% |  |  | 冯雷 [90%] | 4h | 4h |
| 56 | 1.2.3.2.3 | 查看使用情况 | 0.56d | 2019-10-10 14:08 A | 2019-10-11 09:35 A | 55 | 100% |  |  | 冯雷 [90%] | 4h | 4h |
| 57 | 1.2.3.2.4 | 编辑底层设备控制模块 | 0.56d | 2019-10-11 09:35 A | 2019-10-11 15:01 A | 56 | 100% |  |  | 冯雷 [90%] | 4h | 4h |
| 58 | 1.2.3.2.5 | 删除底层设备控制模块 | 0.56d | 2019-10-11 15:01 A | 2019-10-12 10:28 A | 57 | 100% |  |  | 冯雷 [90%] | 4h | 4h |
| 59 | 1.2.3.3 | **网络拓扑管理模块** | 2.22d | 2019-10-12 10:28 A | 2019-10-15 13:15 A |  | 100% |  |  |  | 16h | 16h |
| 60 | 1.2.3.3.1 | 网络拓扑管理模块列表 | 0.56d | 2019-10-12 10:28 A | 2019-10-12 15:55 A | 58 | 100% |  |  | 冯雷 [90%] | 4h | 4h |
| 61 | 1.2.3.3.2 | 新增络拓扑管理模块 | 0.56d | 2019-10-12 15:55 A | 2019-10-14 11:21 A | 60 | 100% |  |  | 冯雷 [90%] | 4h | 4h |
| 62 | 1.2.3.3.3 | 编辑络拓扑管理模块 | 0.56d | 2019-10-14 11:21 A | 2019-10-14 16:48 A | 61 | 100% |  |  | 冯雷 [90%] | 4h | 4h |
| 63 | 1.2.3.3.4 | 删除络拓扑管理模块 | 0.56d | 2019-10-14 16:48 A | 2019-10-15 13:15 A | 62 | 100% |  |  | 冯雷 [90%] | 4h | 4h |
| 64 | 1.2.4 | **课程管理** | 12.61d | 2019-10-15 13:15 | 2019-11-01 09:10 |  |  | 21.71d |  |  | 76h |  |
| 65 | 1.2.4.1 | **课程管理** | 10.72d | 2019-10-17 11:26 | 2019-11-01 09:10 |  |  | 21.71d |  |  | 60h |  |
| 66 | 1.2.4.1.1 | 课程列表 | 0.71d | 2019-10-17 11:26 | 2019-10-18 09:09 | 52 |  | 21.71d | 0d | 王战永 [70%] | 4h |  |
| 67 | 1.2.4.1.2 | 新建课程 | 0.71d | 2019-10-18 09:09 | 2019-10-18 15:52 | 66 |  | 21.71d | 0d | 王战永 [70%] | 4h |  |
| 68 | 1.2.4.1.3 | 课件管理-课件列表 | 0.71d | 2019-10-18 15:52 | 2019-10-21 13:35 | 67 |  | 21.71d | 0d | 王战永 [70%] | 4h |  |
| 69 | 1.2.4.1.4 | 课件管理-导入课件 | 0.71d | 2019-10-21 13:35 | 2019-10-22 10:18 | 68 |  | 21.71d | 0d | 王战永 [70%] | 4h |  |
| 70 | 1.2.4.1.5 | 课件管理-编辑课件 | 0.71d | 2019-10-22 10:18 | 2019-10-23 08:01 | 69 |  | 21.71d | 0d | 王战永 [70%] | 4h |  |
| 71 | 1.2.4.1.6 | 课件管理-删除课件 | 0.71d | 2019-10-23 08:01 | 2019-10-23 14:44 | 70 |  | 21.71d | 0d | 王战永 [70%] | 4h |  |
| 72 | 1.2.4.1.7 | 课堂作业-课程作业列表 | 0.71d | 2019-10-23 14:44 | 2019-10-24 11:27 | 71 |  | 21.71d | 0d | 王战永 [70%] | 4h |  |
| 73 | 1.2.4.1.8 | 课堂作业-作业统计 | 0.71d | 2019-10-24 11:27 | 2019-10-25 09:09 | 72 |  | 21.71d | 0d | 王战永 [70%] | 4h |  |
| 74 | 1.2.4.1.9 | 课堂作业-布置作业 | 0.71d | 2019-10-25 09:09 | 2019-10-25 15:52 | 73 |  | 21.71d | 0d | 王战永 [70%] | 4h |  |
| 75 | 1.2.4.1.10 | 编辑课程-课程设置 | 0.71d | 2019-10-25 15:52 | 2019-10-28 13:35 | 74 |  | 21.71d | 0d | 王战永 [70%] | 4h |  |
| 76 | 1.2.4.1.11 | 编辑课程-课程信息-编辑课程信息 | 0.71d | 2019-10-28 13:35 | 2019-10-29 10:18 | 75 |  | 21.71d | 0d | 王战永 [70%] | 4h |  |
| 77 | 1.2.4.1.12 | 编辑课程-实验步骤-编辑实验步骤 | 0.71d | 2019-10-29 10:18 | 2019-10-30 08:01 | 76 |  | 21.71d | 0d | 王战永 [70%] | 4h |  |
| 78 | 1.2.4.1.13 | 编辑课程-教学大纲-编辑教学大纲 | 0.71d | 2019-10-30 08:01 | 2019-10-30 14:44 | 77 |  | 21.71d | 0d | 王战永 [70%] | 4h |  |
| 79 | 1.2.4.1.14 | 编辑课程-网络拓扑 | 0.71d | 2019-10-30 14:44 | 2019-10-31 11:27 | 78 |  | 21.71d | 0d | 王战永 [70%] | 4h |  |
| 80 | 1.2.4.1.15 | 删除课程 | 0.71d | 2019-10-31 11:27 | 2019-11-01 09:10 | 79 |  | 21.71d | 0d | 王战永 [70%] | 4h |  |

| ID | WBS | Task | Duration | Start | Finish | Predecessors | Total slack | Free slack | Resources | Work |
| --- | --- | --- | --- | --- | --- | --- | --- | --- | --- | --- |
| 81 | 1.2.4.2 | **课程分类** | 0.56d | 2019-10-15 13:15 | 2019-10-16 08:42 |  | 28.29d |  |  | 4h |
| 82 | 1.2.4.2.1 | 课程分类管理-添加二级分类 | 0.56d | 2019-10-15 13:15 | 2019-10-16 08:42 | 63 | 28.29d | 0d | 冯雷 [90%] | 4h |
| 83 | 1.2.4.3 | **课程调度** | 1.67d | 2019-10-16 08:42 | 2019-10-17 15:02 |  | 28.29d |  |  | 12h |
| 84 | 1.2.4.3.1 | 课程调度-课程调度列表 | 0.56d | 2019-10-16 08:42 | 2019-10-16 14:08 | 82 | 28.29d | 0d | 冯雷 [90%] | 4h |
| 85 | 1.2.4.3.2 | 课程调度-加载课程 | 0.56d | 2019-10-16 14:08 | 2019-10-17 09:35 | 84 | 28.29d | 0d | 冯雷 [90%] | 4h |
| 86 | 1.2.4.3.3 | 课程调度-添加实验组 | 0.56d | 2019-10-17 09:35 | 2019-10-17 15:02 | 85 | 28.29d | 0d | 冯雷 [90%] | 4h |
| 87 | 1.2.5 | **拓扑管理** | 5.56d | 2019-10-17 15:02 | 2019-10-25 10:29 |  | 28.29d |  |  | 40h |
| 88 | 1.2.5.1 | **网络拓扑分类** | 2.22d | 2019-10-17 15:02 | 2019-10-21 16:48 |  | 28.29d |  |  | 16h |
| 89 | 1.2.5.1.1 | 网络拓扑分类列表 | 0.56d | 2019-10-17 15:02 | 2019-10-18 10:28 | 86 | 28.29d | 0d | 冯雷 [90%] | 4h |
| 90 | 1.2.5.1.2 | 添加网络拓扑分类 | 0.56d | 2019-10-18 10:28 | 2019-10-18 15:55 | 89 | 28.29d | 0d | 冯雷 [90%] | 4h |
| 91 | 1.2.5.1.3 | 编辑网络拓扑分类 | 0.56d | 2019-10-18 15:55 | 2019-10-21 11:22 | 90 | 28.29d | 0d | 冯雷 [90%] | 4h |
| 92 | 1.2.5.1.4 | 删除网络拓扑分类 | 0.56d | 2019-10-21 11:22 | 2019-10-21 16:48 | 91 | 28.29d | 0d | 冯雷 [90%] | 4h |
| 93 | 1.2.5.2 | **拓扑端口管理** | 1.67d | 2019-10-21 16:48 | 2019-10-23 14:09 |  | 28.29d |  |  | 12h |
| 94 | 1.2.5.2.1 | 拓扑端口列表 | 0.56d | 2019-10-21 16:48 | 2019-10-22 13:15 | 92 | 28.29d | 0d | 冯雷 [90%] | 4h |
| 95 | 1.2.5.2.2 | 新增拓扑端口 | 0.56d | 2019-10-22 13:15 | 2019-10-23 08:42 | 94 | 28.29d | 0d | 冯雷 [90%] | 4h |
| 96 | 1.2.5.2.3 | 删除拓扑端口 | 0.56d | 2019-10-23 08:42 | 2019-10-23 14:09 | 95 | 28.29d | 0d | 冯雷 [90%] | 4h |
| 97 | 1.2.5.3 | **网络拓扑设计** | 1.67d | 2019-10-23 14:09 | 2019-10-25 10:29 |  | 28.29d |  |  | 12h |
| 98 | 1.2.5.3.1 | 添加网络拓扑 | 0.56d | 2019-10-23 14:09 | 2019-10-24 09:35 | 96 | 28.29d | 0d | 冯雷 [90%] | 4h |
| 99 | 1.2.5.3.2 | 编辑网络拓扑 | 0.56d | 2019-10-24 09:35 | 2019-10-24 15:02 | 98 | 28.29d | 0d | 冯雷 [90%] | 4h |
| 100 | 1.2.5.3.3 | 删除网络拓扑 | 0.56d | 2019-10-24 15:02 | 2019-10-25 10:29 | 99 | 28.29d | 0d | 冯雷 [90%] | 4h |
| 101 | 1.2.6 | **用户管理** | 11.27d | 2019-10-25 10:29 | 2019-11-11 13:36 |  | 21.71d |  |  | 60h |
| 102 | 1.2.6.1 | **组织管理** | 2.22d | 2019-10-25 10:29 | 2019-10-29 13:15 |  | 28.29d |  |  | 16h |
| 103 | 1.2.6.1.1 | 组织管理列表 | 0.56d | 2019-10-25 10:29 | 2019-10-25 15:55 | 100 | 28.29d | 0d | 冯雷 [90%] | 4h |
| 104 | 1.2.6.1.2 | 新建组织 | 0.56d | 2019-10-25 15:55 | 2019-10-28 11:22 | 103 | 28.29d | 0d | 冯雷 [90%] | 4h |
| 105 | 1.2.6.1.3 | 编辑组织 | 0.56d | 2019-10-28 11:22 | 2019-10-28 16:49 | 104 | 28.29d | 0d | 冯雷 [90%] | 4h |
| 106 | 1.2.6.1.4 | 删除组织 | 0.56d | 2019-10-28 16:49 | 2019-10-29 13:15 | 105 | 28.29d | 0d | 冯雷 [90%] | 4h |

| ID | WBS | Task | Duration | Start | Finish | Predecessors | Total slack | Free slack | Resources | Work |
| --- | --- | --- | --- | --- | --- | --- | --- | --- | --- | --- |
| 107 | 1.2.6.2 | **审核用户** | 1.11d | 2019-10-29 13:15 | 2019-10-30 14:09 |  | 28.29d |  |  | 8h |
| 108 | 1.2.6.2.1 | 审核用户列表 | 0.56d | 2019-10-29 13:15 | 2019-10-30 08:42 | 106 | 28.29d | 0d | 冯雷 [90%] | 4h |
| 109 | 1.2.6.2.2 | 删除审核用户 | 0.56d | 2019-10-30 08:42 | 2019-10-30 14:09 | 108 | 28.29d | 0d | 冯雷 [90%] | 4h |
| 110 | 1.2.6.3 | **用户管理** | 6.43d | 2019-11-01 09:10 | 2019-11-11 13:36 |  | 21.71d |  |  | 36h |
| 111 | 1.2.6.3.1 | 用户列表 | 0.71d | 2019-11-01 09:10 | 2019-11-01 15:53 | 80 | 21.71d | 0d | 王战永 [70%] | 4h |
| 112 | 1.2.6.3.2 | 新增用户 | 0.71d | 2019-11-01 15:53 | 2019-11-04 13:36 | 111 | 21.71d | 0d | 王战永 [70%] | 4h |
| 113 | 1.2.6.3.3 | 密文导入用户 | 0.71d | 2019-11-04 13:36 | 2019-11-05 10:18 | 112 | 21.71d | 0d | 王战永 [70%] | 4h |
| 114 | 1.2.6.3.4 | 明文导入用户 | 0.71d | 2019-11-05 10:18 | 2019-11-06 08:01 | 113 | 21.71d | 0d | 王战永 [70%] | 4h |
| 115 | 1.2.6.3.5 | 导出用户 | 0.71d | 2019-11-06 08:01 | 2019-11-06 14:44 | 114 | 21.71d | 0d | 王战永 [70%] | 4h |
| 116 | 1.2.6.3.6 | 启用/锁定用户 | 0.71d | 2019-11-06 14:44 | 2019-11-07 11:27 | 115 | 21.71d | 0d | 王战永 [70%] | 4h |
| 117 | 1.2.6.3.7 | 查看用户信息 | 0.71d | 2019-11-07 11:27 | 2019-11-08 09:10 | 116 | 21.71d | 0d | 王战永 [70%] | 4h |
| 118 | 1.2.6.3.8 | 编辑用户 | 0.71d | 2019-11-08 09:10 | 2019-11-08 15:53 | 117 | 21.71d | 0d | 王战永 [70%] | 4h |
| 119 | 1.2.6.3.9 | 删除用户 | 0.71d | 2019-11-08 15:53 | 2019-11-11 13:36 | 118 | 21.71d | 0d | 王战永 [70%] | 4h |
| 120 | 1.2.7 | **查询统计** | 7.78d | 2019-10-30 14:09 | 2019-11-11 11:23 |  | 28.29d |  |  | 56h |
| 121 | 1.2.7.1 | **用户考勤** | 1.67d | 2019-10-30 14:09 | 2019-11-01 10:29 |  | 28.29d |  |  | 12h |
| 122 | 1.2.7.1.1 | 用户考勤列表 | 0.56d | 2019-10-30 14:09 | 2019-10-31 09:36 | 109 | 28.29d | 0d | 冯雷 [90%] | 4h |
| 123 | 1.2.7.1.2 | 编辑用户考勤 | 0.56d | 2019-10-31 09:36 | 2019-10-31 15:02 | 122 | 28.29d | 0d | 冯雷 [90%] | 4h |
| 124 | 1.2.7.1.3 | 删除用户考勤 | 0.56d | 2019-10-31 15:02 | 2019-11-01 10:29 | 123 | 28.29d | 0d | 冯雷 [90%] | 4h |
| 125 | 1.2.7.2 | **在线用户** | 1.11d | 2019-11-01 10:29 | 2019-11-04 11:22 |  | 28.29d |  |  | 8h |
| 126 | 1.2.7.2.1 | 在线用户列表 | 0.56d | 2019-11-01 10:29 | 2019-11-01 15:56 | 124 | 28.29d | 0d | 冯雷 [90%] | 4h |
| 127 | 1.2.7.2.2 | 查看在线用户详情 | 0.56d | 2019-11-01 15:56 | 2019-11-04 11:22 | 126 | 28.29d | 0d | 冯雷 [90%] | 4h |
| 128 | 1.2.7.3 | **命令日志** | 1.67d | 2019-11-04 11:22 | 2019-11-06 08:42 |  | 28.29d |  |  | 12h |
| 129 | 1.2.7.3.1 | 命令日志列表 | 0.56d | 2019-11-04 11:22 | 2019-11-04 16:49 | 127 | 28.29d | 0d | 冯雷 [90%] | 4h |
| 130 | 1.2.7.3.2 | 查看详细命令 | 0.56d | 2019-11-04 16:49 | 2019-11-05 13:16 | 129 | 28.29d | 0d | 冯雷 [90%] | 4h |
| 131 | 1.2.7.3.3 | 删除命令日志 | 0.56d | 2019-11-05 13:16 | 2019-11-06 08:42 | 130 | 28.29d | 0d | 冯雷 [90%] | 4h |

| ID | WBS | Task | Duration | Start | Finish | Predecessors | Total slack | Free slack | Resources | Work |
| --- | --- | --- | --- | --- | --- | --- | --- | --- | --- | --- |
| 132 | 1.2.7.4 | **操作日志** | 1.11d | 2019-11-06 08:42 | 2019-11-07 09:36 |  | 28.29d |  |  | 8h |
| 133 | 1.2.7.4.1 | 操作日志列表 | 0.56d | 2019-11-06 08:42 | 2019-11-06 14:09 | 131 | 28.29d | 0d | 冯雷 [90%] | 4h |
| 134 | 1.2.7.4.2 | 查看操作日志 | 0.56d | 2019-11-06 14:09 | 2019-11-07 09:36 | 133 | 28.29d | 0d | 冯雷 [90%] | 4h |
| 135 | 1.2.7.5 | **恢复日志** | 1.11d | 2019-11-07 09:36 | 2019-11-08 10:29 |  | 28.29d |  |  | 8h |
| 136 | 1.2.7.5.1 | 恢复日志列表 | 0.56d | 2019-11-07 09:36 | 2019-11-07 15:03 | 134 | 28.29d | 0d | 冯雷 [90%] | 4h |
| 137 | 1.2.7.5.2 | 查看恢复日志备注 | 0.56d | 2019-11-07 15:03 | 2019-11-08 10:29 | 136 | 28.29d | 0d | 冯雷 [90%] | 4h |
| 138 | 1.2.7.6 | **设备使用情况** | 1.11d | 2019-11-08 10:29 | 2019-11-11 11:23 |  | 28.29d |  |  | 8h |
| 139 | 1.2.7.6.1 | 备使用情况列表 | 0.56d | 2019-11-08 10:29 | 2019-11-08 15:56 | 137 | 28.29d | 0d | 冯雷 [90%] | 4h |
| 140 | 1.2.7.6.2 | 删除设备使用情况 | 0.56d | 2019-11-08 15:56 | 2019-11-11 11:23 | 139 | 28.29d | 0d | 冯雷 [90%] | 4h |
| 141 | 1.2.8 | **实验帮助** | 2.14d | 2019-11-11 13:36 | 2019-11-13 14:45 |  | 21.71d |  |  | 12h |
| 142 | 1.2.8.1 | 实验帮助-实验帮助列表 | 0.71d | 2019-11-11 13:36 | 2019-11-12 10:19 | 119 | 21.71d | 0d | 王战永 [70%] | 4h |
| 143 | 1.2.8.2 | 实验帮助-上传实验帮助 | 0.71d | 2019-11-12 10:19 | 2019-11-13 08:02 | 142 | 21.71d | 0d | 王战永 [70%] | 4h |
| 144 | 1.2.8.3 | 实验帮助-删除实验帮助 | 0.71d | 2019-11-13 08:02 | 2019-11-13 14:45 | 143 | 21.71d | 0d | 王战永 [70%] | 4h |
| 145 | 1.2.9 | **设备恢复** | 0.56d | 2019-11-11 11:23 | 2019-11-11 16:49 |  | 28.29d |  |  | 4h |
| 146 | 1.2.9.1 | 设备恢复-设备恢复列表 | 0.56d | 2019-11-11 11:23 | 2019-11-11 16:49 | 140 | 28.29d | 0d | 冯雷 [90%] | 4h |
| 147 | 1.2.10 | **系统管理** | 4.29d | 2019-11-13 14:45 | 2019-11-20 08:02 |  | 21.71d |  |  | 24h |
| 148 | 1.2.10.1 | 系统设置-编辑系统设置 | 0.71d | 2019-11-13 14:45 | 2019-11-14 11:27 | 144 | 21.71d | 0d | 王战永 [70%] | 4h |
| 149 | 1.2.10.2 | 系统公告-系统公告列表 | 0.71d | 2019-11-14 11:27 | 2019-11-15 09:10 | 148 | 21.71d | 0d | 王战永 [70%] | 4h |
| 150 | 1.2.10.3 | 系统公告-发布系统公告 | 0.71d | 2019-11-15 09:10 | 2019-11-15 15:53 | 149 | 21.71d | 0d | 王战永 [70%] | 4h |
| 151 | 1.2.10.4 | 系统公告-查看系统公告详情 | 0.71d | 2019-11-15 15:53 | 2019-11-18 13:36 | 150 | 21.71d | 0d | 王战永 [70%] | 4h |
| 152 | 1.2.10.5 | 系统公告-删除系统公告 | 0.71d | 2019-11-18 13:36 | 2019-11-19 10:19 | 151 | 21.71d | 0d | 王战永 [70%] | 4h |
| 153 | 1.2.10.6 | 系统升级 | 0.71d | 2019-11-19 10:19 | 2019-11-20 08:02 | 152 | 21.71d | 0d | 王战永 [70%] | 4h |
| 154 | 1.3 | **前台功能** | 11.03d | 2019-11-11 16:49 | 2019-11-27 08:02 |  | 27.73d |  |  | 64.03h |
| 155 | 1.3.1 | 前台首页 | 0.56d | 2019-11-15 09:48 | 2019-11-15 15:17 |  | 43.21d |  | 冯雷 [90%] | 4.03h |

| ID | WBS | Task | Type | Duration | Start | Finish | Predecessors | Total slack | Free slack | Resources | Work |
| --- | --- | --- | --- | --- | --- | --- | --- | --- | --- | --- | --- |
| 156 | 1.3.2 | **课堂实验** |  | 1.11d | 2019-11-11 16:49 | 2019-11-13 08:43 |  | 28.29d |  |  | 8h |
| 157 | 1.3.2.1 | 课堂实验-课堂实验列表 |  | 0.56d | 2019-11-11 16:49 | 2019-11-12 13:16 | 146 | 28.29d | 0d | 冯雷 [90%] | 4h |
| 158 | 1.3.2.2 | 课堂实验-操作课堂实验 |  | 0.56d | 2019-11-12 13:16 | 2019-11-13 08:43 | 157 | 28.29d | 0d | 冯雷 [90%] | 4h |
| 159 | 1.3.3 | **实验报告** |  | 2.22d | 2019-11-13 08:43 | 2019-11-15 10:30 |  | 28.29d |  |  | 16h |
| 160 | 1.3.3.1 | 实验报告-实验报告列表 |  | 0.56d | 2019-11-13 08:43 | 2019-11-13 14:09 | 158 | 28.29d | 0d | 冯雷 [90%] | 4h |
| 161 | 1.3.3.2 | 实验报告-查看实验报告详情 |  | 0.56d | 2019-11-13 14:09 | 2019-11-14 09:36 | 160 | 28.29d | 0d | 冯雷 [90%] | 4h |
| 162 | 1.3.3.3 | 实验报告-批改实验报告 |  | 0.56d | 2019-11-14 09:36 | 2019-11-14 15:03 | 161 | 28.29d | 0d | 冯雷 [90%] | 4h |
| 163 | 1.3.3.4 | 实验报告-删除实验报告 |  | 0.56d | 2019-11-14 15:03 | 2019-11-15 10:30 | 162 | 28.29d | 0d | 冯雷 [90%] | 4h |
| 164 | 1.3.4 | **实验日志** |  | 1.43d | 2019-11-20 08:02 | 2019-11-21 11:28 |  | 21.71d |  |  | 8h |
| 165 | 1.3.4.1 | 实验日志-实验日志列表 |  | 0.71d | 2019-11-20 08:02 | 2019-11-20 14:45 | 153 | 21.71d | 0d | 王战永 [70%] | 4h |
| 166 | 1.3.4.2 | 实验日志-查看详细命令 |  | 0.71d | 2019-11-20 14:45 | 2019-11-21 11:28 | 165 | 21.71d | 0d | 王战永 [70%] | 4h |
| 167 | 1.3.5 | **用户信息** |  | 1.43d | 2019-11-21 11:28 | 2019-11-22 15:54 |  | 21.71d |  |  | 8h |
| 168 | 1.3.5.1 | 信息修改-编辑用户信息 |  | 0.71d | 2019-11-21 11:28 | 2019-11-22 09:11 | 166 | 21.71d | 0d | 王战永 [70%] | 4h |
| 169 | 1.3.5.2 | 密码修改-修改密码 |  | 0.71d | 2019-11-22 09:11 | 2019-11-22 15:54 | 168 | 21.71d | 0d | 王战永 [70%] | 4h |
| 170 | 1.3.6 | **实验帮助** |  | 0.56d | 2019-11-15 10:30 | 2019-11-15 15:56 |  | 28.29d |  |  | 4h |
| 171 | 1.3.6.1 | 实验帮助-实验帮助列表 |  | 0.56d | 2019-11-15 10:30 | 2019-11-15 15:56 | 163 | 28.29d | 0d | 冯雷 [90%] | 4h |
| 172 | 1.3.7 | **系统公告** |  | 1.43d | 2019-11-22 15:54 | 2019-11-26 10:19 |  | 21.71d |  |  | 8h |
| 173 | 1.3.7.1 | 系统公告-系统公告列表 |  | 0.71d | 2019-11-22 15:54 | 2019-11-25 13:36 | 169 | 21.71d | 0d | 王战永 [70%] | 4h |
| 174 | 1.3.7.2 | 系统公告-查看系统公告详情 |  | 0.71d | 2019-11-25 13:36 | 2019-11-26 10:19 | 173 | 21.71d | 0d | 王战永 [70%] | 4h |
| 175 | 1.3.8 | **登录注册** |  | 7.14d | 2019-11-15 15:56 | 2019-11-27 08:02 |  | 21.71d |  |  | 8h |
| 176 | 1.3.8.1 | 登录页面 |  | 0.56d | 2019-11-15 15:56 | 2019-11-18 11:23 | 171 | 28.29d | 6.58d | 冯雷 [90%] | 4h |
| 177 | 1.3.8.2 | 注册页面 |  | 0.71d | 2019-11-26 10:19 | 2019-11-27 08:02 | 174 | 21.71d | 0d | 王战永 [70%] | 4h |
| 178 | 1.4 | 已知bug/需求修改 |  | 14.29d | 2019-11-27 08:02 | 2019-12-17 10:19 | 176, 177 | 21.71d |  | 冯雷 [90%]; 王战永 [70%] | 160h |
| 179 | 2 | **Netcollege测试阶段** |  | 68.66d? | 2019-09-17 08:00 | 2019-12-25 14:14 |  | 0d |  |  | 816.8h |
| 180 | 2.1 | **性能测试** |  | 7d | 2019-09-23 08:00 | 2019-09-30 17:00 |  |  |  |  | 57.6h |
| 181 | 2.1.1 | 测试调试 | manual | 7d | 2019-09-23 08:00 | 2019-09-30 17:00 |  |  |  | 刘江珊 [60%] | 33.6h |
| 182 | 2.1.2 | 测试执行 | manual | 5d | 2019-10-08 08:00 | 2019-10-12 17:00 | 181 |  |  | 刘江珊 [60%] | 24h |

| ID | WBS | Task | Duration | Start | Finish | Predecessors | Total slack | Free slack | Constraint | Resources | Work |
| --- | --- | --- | --- | --- | --- | --- | --- | --- | --- | --- | --- |
| 183 | 2.2 | **测试用例编写** | 25d? | 2019-09-23 08:00 | 2019-10-30 17:00 |  |  |  |  |  | 187.2h |
| 184 | 2.2.1 | **设备管理** | 7d | 2019-09-23 08:00 | 2019-09-30 17:00 |  |  |  |  |  | 46h |
| 185 | 2.2.1.1 | **实验设备管理** | 2d? | 2019-09-23 08:00 | 2019-09-24 17:00 |  |  |  |  |  | 10h |
| 186 | 2.2.1.1.1 | 实验设备列表 | 0.25d? | 2019-09-23 08:00 | 2019-09-23 10:00 |  | 0.75d | 0d | start no earlier than 2019-09-23 08:00 | 张幽雅 | 2h |
| 187 | 2.2.1.1.2 | 新增实验设备 | 0.25d? | 2019-09-23 10:00 | 2019-09-23 12:00 | 186 | 0.75d | 0d |  | 张幽雅 | 2h |
| 188 | 2.2.1.1.3 | 查看设备状态 | 0.25d? | 2019-09-23 13:00 | 2019-09-23 15:00 | 187 | 0.75d | 0d |  | 张幽雅 | 2h |
| 189 | 2.2.1.1.4 | 编辑实验设备 | 0.25d? | 2019-09-23 15:00 | 2019-09-23 17:00 | 188 | 0.75d | 0d |  | 张幽雅 | 2h |
| 190 | 2.2.1.1.5 | 删除实验设备 | 0.25d? | 2019-09-24 08:00 | 2019-09-24 10:00 | 189 | 0.75d |  |  | 张幽雅 | 2h |
| 191 | 2.2.1.2 | **设备类别设置** | 1d? | 2019-09-25 08:00 | 2019-09-25 17:00 |  |  |  |  |  | 8h |
| 192 | 2.2.1.2.1 | 设备类别列表 | 0.25d | 2019-09-25 08:00 | 2019-09-25 10:00 |  | 0d |  | start no earlier than 2019-09-25 08:00 | 张幽雅 | 2h |
| 193 | 2.2.1.2.2 | 新建设备类别 | 0.25d | 2019-09-25 10:00 | 2019-09-25 12:00 | 192 | 0d |  |  | 张幽雅 | 2h |
| 194 | 2.2.1.2.3 | 编辑设备类别 | 0.25d | 2019-09-25 13:00 | 2019-09-25 15:00 | 193 | 0d |  |  | 张幽雅 | 2h |
| 195 | 2.2.1.2.4 | 删除设备类别 | 0.25d | 2019-09-25 15:00 | 2019-09-25 17:00 | 194 | 0d |  |  | 张幽雅 | 2h |
| 196 | 2.2.1.3 | **设备型号管理** | 1d? | 2019-09-26 08:00 | 2019-09-26 17:00 |  |  |  |  |  | 8h |
| 197 | 2.2.1.3.1 | 设备型号列表 | 0.25d? | 2019-09-26 08:00 | 2019-09-26 10:00 |  | 0d |  | start no earlier than 2019-09-26 08:00 | 张幽雅 | 2h |
| 198 | 2.2.1.3.2 | 新建设备型号 | 0.25d? | 2019-09-26 10:00 | 2019-09-26 12:00 | 197 | 0d |  |  | 张幽雅 | 2h |
| 199 | 2.2.1.3.3 | 编辑设备型号 | 0.25d? | 2019-09-26 13:00 | 2019-09-26 15:00 | 198 | 0d |  |  | 张幽雅 | 2h |
| 200 | 2.2.1.3.4 | 删除设备型号 | 0.25d? | 2019-09-26 15:00 | 2019-09-26 17:00 | 199 | 0d |  |  | 张幽雅 | 2h |
| 201 | 2.2.1.4 | **设备命令过滤** | 1d? | 2019-09-27 08:00 | 2019-09-27 17:00 |  |  |  |  |  | 8h |
| 202 | 2.2.1.4.1 | 设备命令列表 | 0.1d? | 2019-09-27 08:00 | 2019-09-27 08:48 |  | 0d |  | start no earlier than 2019-09-27 08:00 | 张幽雅 | 0.8h |
| 203 | 2.2.1.4.2 | 添加过滤指令-新增禁止指令例外参数 | 0.25d? | 2019-09-27 08:48 | 2019-09-27 10:48 | 202 | 0d |  |  | 张幽雅 | 2h |
| 204 | 2.2.1.4.3 | 查看禁止指令例外参数-编辑例外参数 | 0.15d? | 2019-09-27 10:48 | 2019-09-27 12:00 | 203 | 0d |  |  | 张幽雅 | 1.2h |
| 205 | 2.2.1.4.4 | 查看禁止指令例外参数-删除列外参数 | 0.25d? | 2019-09-27 13:00 | 2019-09-27 15:00 | 204 | 0d |  |  | 张幽雅 | 2h |
| 206 | 2.2.1.4.5 | 编辑命令-新增禁止指令例外参数 | 0.15d? | 2019-09-27 15:00 | 2019-09-27 16:12 | 205 | 0d |  |  | 张幽雅 | 1.2h |
| 207 | 2.2.1.4.6 | 删除命令 | 0.1d? | 2019-09-27 16:12 | 2019-09-27 17:00 | 206 | 0d |  |  | 张幽雅 | 0.8h |

| ID | WBS | Task | Duration | Start | Finish | Predecessors | Total slack | Free slack | Constraint | Resources | Work |
| --- | --- | --- | --- | --- | --- | --- | --- | --- | --- | --- | --- |
| 208 | 2.2.1.5 | **虚拟化设备管理** | 2d? | 2019-09-29 08:00 | 2019-09-30 17:00 |  |  |  |  |  | 12h |
| 209 | 2.2.1.5.1 | 虚拟化设备列表 | 0.25d? | 2019-09-29 08:00 | 2019-09-29 10:00 |  | 0d |  | start no earlier than 2019-09-29 08:00 | 张幽雅 | 2h |
| 210 | 2.2.1.5.2 | 新增虚拟化设备 | 0.7d? | 2019-09-29 10:00 | 2019-09-29 16:36 | 209 | 0d |  |  | 张幽雅 | 5.6h |
| 211 | 2.2.1.5.3 | 查看虚拟系统-新增虚拟系统 | 0.25d? | 2019-09-29 16:36 | 2019-09-30 09:36 | 210 | 0d |  |  | 张幽雅 | 2h |
| 212 | 2.2.1.5.4 | 编辑虚拟化设备 | 0.15d? | 2019-09-30 09:36 | 2019-09-30 10:48 | 211 | 0d |  |  | 张幽雅 | 1.2h |
| 213 | 2.2.1.5.5 | 删除虚拟化设备 | 0.15d? | 2019-09-30 10:48 | 2019-09-30 12:00 | 212 | 0d |  |  | 张幽雅 | 1.2h |
| 214 | 2.2.2 | **实验室管理** | 6d | 2019-10-14 08:00 | 2019-10-21 17:00 |  |  |  |  |  | 42.8h |
| 215 | 2.2.2.1 | **实验室管理** | 3d? | 2019-10-14 08:00 | 2019-10-16 17:00 |  |  |  |  |  | 20.8h |
| 216 | 2.2.2.1.1 | 实验室列表 | 0.25d? | 2019-10-14 08:00 | 2019-10-14 10:00 |  | -0.1d | 0d | start no earlier than 2019-10-14 08:00 | 张幽雅 | 2h |
| 217 | 2.2.2.1.2 | 新建实验室 | 0.5d? | 2019-10-14 10:00 | 2019-10-14 15:00 | 216 | -0.1d | 0d |  | 张幽雅 | 4h |
| 218 | 2.2.2.1.3 | 查看实验组-新建实验组 | 0.25d? | 2019-10-14 15:00 | 2019-10-14 17:00 | 217 | -0.1d | 0d |  | 张幽雅 | 2h |
| 219 | 2.2.2.1.4 | 查看实验组-克隆实验组 | 0.25d? | 2019-10-15 08:00 | 2019-10-15 10:00 | 218 | -0.1d | 0d |  | 张幽雅 | 2h |
| 220 | 2.2.2.1.5 | 查看实验组-查看拥有设备-查看设备状态 | 0.15d? | 2019-10-15 10:00 | 2019-10-15 11:12 | 219 | -0.1d | 0d |  | 张幽雅 | 1.2h |
| 221 | 2.2.2.1.6 | 查看实验组-查看拥有设备-编辑设备信息 | 0.15d? | 2019-10-15 11:12 | 2019-10-15 13:24 | 220 | -0.1d | 0d |  | 张幽雅 | 1.2h |
| 222 | 2.2.2.1.7 | 查看实验组-查看拥有设备-删除设备 | 0.15d? | 2019-10-15 13:24 | 2019-10-15 14:36 | 221 | -0.1d | 0d |  | 张幽雅 | 1.2h |
| 223 | 2.2.2.1.8 | 查看实验组-查看拥有设备-安排实验用户-实验用户列表 | 0.15d? | 2019-10-15 14:36 | 2019-10-15 15:48 | 222 | -0.1d | 0d |  | 张幽雅 | 1.2h |
| 224 | 2.2.2.1.9 | 查看实验组-查看拥有设备-安排实验用户-安排实验用户 | 0.15d? | 2019-10-15 15:48 | 2019-10-15 17:00 | 223 | -0.1d | 0d |  | 张幽雅 | 1.2h |
| 225 | 2.2.2.1.10 | 查看实验组-编辑实验组 | 0.15d? | 2019-10-16 08:00 | 2019-10-16 09:12 | 224 | -0.1d | 0d |  | 张幽雅 | 1.2h |
| 226 | 2.2.2.1.11 | 查看实验组-删除实验组 | 0.15d? | 2019-10-16 09:12 | 2019-10-16 10:24 | 225 | -0.1d | 0d |  | 张幽雅 | 1.2h |
| 227 | 2.2.2.1.12 | 编辑实验室 | 0.15d? | 2019-10-16 10:24 | 2019-10-16 11:36 | 226 | -0.1d | 0d |  | 张幽雅 | 1.2h |
| 228 | 2.2.2.1.13 | 删除实验室 | 0.15d? | 2019-10-16 11:36 | 2019-10-16 13:48 | 227 | -0.1d | 0d |  | 张幽雅 | 1.2h |
| 229 | 2.2.2.2 | **底层设备控制模块** | 2d | 2019-10-16 08:00 | 2019-10-17 17:00 | 228 |  |  |  |  | 12h |
| 230 | 2.2.2.2.1 | 底层设备控制模块列表 | 0.25d? | 2019-10-16 13:48 | 2019-10-16 15:48 | 228 | -0.1d | 0d | start no earlier than 2019-10-11 08:00 | 张幽雅 | 2h |
| 231 | 2.2.2.2.2 | 新增底层设备控制模块 | 0.5d? | 2019-10-16 15:48 | 2019-10-17 10:48 | 230 | -0.1d | 0d |  | 张幽雅 | 4h |
| 232 | 2.2.2.2.3 | 查看使用情况 | 0.25d? | 2019-10-17 10:48 | 2019-10-17 13:48 | 231 | -0.1d | 0d |  | 张幽雅 | 2h |
| 233 | 2.2.2.2.4 | 编辑底层设备控制模块 | 0.25d? | 2019-10-17 13:48 | 2019-10-17 15:48 | 232 | -0.1d | 0d |  | 张幽雅 | 2h |
| 234 | 2.2.2.2.5 | 删除底层设备控制模块 | 0.25d? | 2019-10-17 15:48 | 2019-10-18 08:48 | 233 | -0.1d | 0d |  | 张幽雅 | 2h |

| ID | WBS | Task | Duration | Start | Finish | Predecessors | Total slack | Free slack | Constraint | Resources | Work |
| --- | --- | --- | --- | --- | --- | --- | --- | --- | --- | --- | --- |
| 235 | 2.2.2.3 | **网络拓扑管理模块** | 2d? | 2019-10-18 08:00 | 2019-10-21 17:00 | 234 |  |  |  |  | 10h |
| 236 | 2.2.2.3.1 | 网络拓扑管理模块列表 | 0.25d? | 2019-10-18 08:48 | 2019-10-18 10:48 | 234 | 0d |  | start no earlier than 2019-10-14 08:00 | 张幽雅 | 2h |
| 237 | 2.2.2.3.2 | 新增络拓扑管理模块 | 0.5d? | 2019-10-18 10:48 | 2019-10-18 15:48 | 236 | 0d |  |  | 张幽雅 | 4h |
| 238 | 2.2.2.3.3 | 编辑络拓扑管理模块 | 0.25d? | 2019-10-18 15:48 | 2019-10-21 08:48 | 237 | 0d |  |  | 张幽雅 | 2h |
| 239 | 2.2.2.3.4 | 删除络拓扑管理模块 | 0.25d? | 2019-10-21 08:48 | 2019-10-21 10:48 | 238 | 0d |  |  | 张幽雅 | 2h |
| 240 | 2.2.3 | **课程管理** | 5d? | 2019-10-25 08:00 | 2019-10-31 17:00 |  |  |  |  |  | 37.6h |
| 241 | 2.2.3.1 | **课程管理** | 3d? | 2019-10-25 08:00 | 2019-10-29 17:00 |  |  |  |  |  | 21.6h |
| 242 | 2.2.3.1.1 | 课程列表 | 0.25d? | 2019-10-25 08:00 | 2019-10-25 10:00 | 369 | -0.2d | 0d | start no earlier than 2019-10-16 08:00 | 张幽雅 | 2h |
| 243 | 2.2.3.1.2 | 新建课程 | 0.5d? | 2019-10-25 10:00 | 2019-10-25 15:00 | 242 | -0.2d | 0d |  | 张幽雅 | 4h |
| 244 | 2.2.3.1.3 | 课件管理-课件列表 | 0.15d? | 2019-10-25 15:00 | 2019-10-25 16:12 | 243 | -0.2d | 0d |  | 张幽雅 | 1.2h |
| 245 | 2.2.3.1.4 | 课件管理-导入课件 | 0.15d? | 2019-10-25 16:12 | 2019-10-28 08:24 | 244 | -0.2d | 0d |  | 张幽雅 | 1.2h |
| 246 | 2.2.3.1.5 | 课件管理-编辑课件 | 0.15d? | 2019-10-28 08:24 | 2019-10-28 09:36 | 245 | -0.2d | 0d |  | 张幽雅 | 1.2h |
| 247 | 2.2.3.1.6 | 课件管理-删除课件 | 0.15d? | 2019-10-28 09:36 | 2019-10-28 10:48 | 246 | -0.2d | 0d |  | 张幽雅 | 1.2h |
| 248 | 2.2.3.1.7 | 课堂作业-课程作业列表 | 0.15d? | 2019-10-28 10:48 | 2019-10-28 12:00 | 247 | -0.2d | 0d |  | 张幽雅 | 1.2h |
| 249 | 2.2.3.1.8 | 课堂作业-作业统计 | 0.15d? | 2019-10-28 13:00 | 2019-10-28 14:12 | 248 | -0.2d | 0d |  | 张幽雅 | 1.2h |
| 250 | 2.2.3.1.9 | 课堂作业-布置作业 | 0.15d? | 2019-10-28 14:12 | 2019-10-28 15:24 | 249 | -0.2d | 0d |  | 张幽雅 | 1.2h |
| 251 | 2.2.3.1.10 | 编辑课程-课程设置 | 0.15d? | 2019-10-28 15:24 | 2019-10-28 16:36 | 250 | -0.2d | 0d |  | 张幽雅 | 1.2h |
| 252 | 2.2.3.1.11 | 编辑课程-课程信息-编辑课程信息 | 0.15d? | 2019-10-28 16:36 | 2019-10-29 08:48 | 251 | -0.2d | 0d |  | 张幽雅 | 1.2h |
| 253 | 2.2.3.1.12 | 编辑课程-实验步骤-编辑实验步骤 | 0.15d? | 2019-10-29 08:48 | 2019-10-29 10:00 | 252 | -0.2d | 0d |  | 张幽雅 | 1.2h |
| 254 | 2.2.3.1.13 | 编辑课程-教学大纲-编辑教学大纲 | 0.15d? | 2019-10-29 10:00 | 2019-10-29 11:12 | 253 | -0.2d | 0d |  | 张幽雅 | 1.2h |
| 255 | 2.2.3.1.14 | 编辑课程-网络拓扑 | 0.15d? | 2019-10-29 11:12 | 2019-10-29 13:24 | 254 | -0.2d | 0d |  | 张幽雅 | 1.2h |
| 256 | 2.2.3.1.15 | 删除课程 | 0.15d? | 2019-10-29 13:24 | 2019-10-29 14:36 | 255 | -0.2d | 0d | finish no earlier than 2019-10-18 17:00 | 张幽雅 | 1.2h |
| 257 | 2.2.3.2 | **课程分类** | 1d? | 2019-10-29 08:00 | 2019-10-29 17:00 | 256 |  |  |  |  | 4h |
| 258 | 2.2.3.2.1 | 课程分类管理-添加二级分类 | 0.5d? | 2019-10-29 14:36 | 2019-10-30 09:36 | 256 | -0.2d | 0d | start no earlier than 2019-10-21 08:00 | 张幽雅 | 4h |

| ID | WBS | Task | Duration | Start | Finish | Predecessors | Total slack | Free slack | Constraint | Resources | Work |
| --- | --- | --- | --- | --- | --- | --- | --- | --- | --- | --- | --- |
| 259 | 2.2.3.3 | **课程调度** | 1.5d? | 2019-10-30 08:00 | 2019-10-31 12:00 | 258 |  |  |  |  | 12h |
| 260 | 2.2.3.3.1 | 课程调度-课程调度列表 | 0.5d? | 2019-10-30 09:36 | 2019-10-30 14:36 | 258 | -0.2d | 0d |  | 张幽雅 | 4h |
| 261 | 2.2.3.3.2 | 课程调度-加载课程 | 0.5d? | 2019-10-30 14:36 | 2019-10-31 09:36 | 260 | -0.2d | 0d |  | 张幽雅 | 4h |
| 262 | 2.2.3.3.3 | 课程调度-添加实验组 | 0.5d? | 2019-10-31 09:36 | 2019-10-31 14:36 | 261 | -0.2d | 0d |  | 张幽雅 | 4h |
| 263 | 2.2.4 | **拓扑管理** | 4d? | 2019-10-10 08:00 | 2019-10-14 17:00 |  |  |  |  |  | 16h |
| 264 | 2.2.4.1 | **网络拓扑分类** | 2d? | 2019-10-10 08:00 | 2019-10-11 17:00 |  |  |  |  |  | 5h |
| 265 | 2.2.4.1.1 | 网络拓扑分类列表 | 0.25d | 2019-10-10 08:00 | 2019-10-10 10:00 |  | -0.2d | 0d | start no earlier than 2019-10-10 08:00 | 付培胜 [50%] | 1h |
| 266 | 2.2.4.1.2 | 添加网络拓扑分类 | 0.5d? | 2019-10-10 10:00 | 2019-10-10 15:00 | 265 | -0.2d | 0d |  | 付培胜 [50%] | 2h |
| 267 | 2.2.4.1.3 | 编辑网络拓扑分类 | 0.25d? | 2019-10-10 15:00 | 2019-10-10 17:00 | 266 | -0.2d | 0d |  | 付培胜 [50%] | 1h |
| 268 | 2.2.4.1.4 | 删除网络拓扑分类 | 0.25d? | 2019-10-11 08:00 | 2019-10-11 10:00 | 267 | -0.2d | 0d |  | 付培胜 [50%] | 1h |
| 269 | 2.2.4.2 | **拓扑端口管理** | 2d? | 2019-10-11 08:00 | 2019-10-12 17:00 |  |  |  |  |  | 4h |
| 270 | 2.2.4.2.1 | 拓扑端口列表 | 0.25d? | 2019-10-11 10:00 | 2019-10-11 12:00 | 268 | -0.2d | 0d |  | 付培胜 [50%] | 1h |
| 271 | 2.2.4.2.2 | 新增拓扑端口 | 0.5d? | 2019-10-11 13:00 | 2019-10-11 17:00 | 270 | -0.2d | 0d |  | 付培胜 [50%] | 2h |
| 272 | 2.2.4.2.3 | 删除拓扑端口 | 0.25d? | 2019-10-12 08:00 | 2019-10-12 10:00 | 271 | -0.2d | 0d |  | 付培胜 [50%] | 1h |
| 273 | 2.2.4.3 | **网络拓扑设计** | 2d? | 2019-10-12 08:00 | 2019-10-14 17:00 |  |  |  |  |  | 7h |
| 274 | 2.2.4.3.1 | 添加网络拓扑 | 1d? | 2019-10-12 10:00 | 2019-10-14 10:00 | 272 | -0.2d | 0d |  | 付培胜 [50%] | 4h |
| 275 | 2.2.4.3.2 | 编辑网络拓扑 | 0.25d? | 2019-10-14 10:00 | 2019-10-14 12:00 | 274 | -0.2d | 0d |  | 付培胜 [50%] | 1h |
| 276 | 2.2.4.3.3 | 删除网络拓扑 | 0.5d? | 2019-10-14 13:00 | 2019-10-14 17:00 | 275 | -0.2d | 0d |  | 付培胜 [50%] | 2h |
| 277 | 2.2.5 | **用户管理** | 4d | 2019-10-15 08:00 | 2019-10-18 17:00 |  |  |  |  |  | 13.2h |
| 278 | 2.2.5.1 | **组织管理** | 1d? | 2019-10-15 08:00 | 2019-10-15 17:00 |  |  |  |  |  | 4h |
| 279 | 2.2.5.1.1 | 组织管理列表 | 0.25d? | 2019-10-15 08:00 | 2019-10-15 10:00 | 276 | -0.2d | 0d |  | 付培胜 [50%] | 1h |
| 280 | 2.2.5.1.2 | 新建组织 | 0.25d? | 2019-10-15 10:00 | 2019-10-15 12:00 | 279 | -0.2d | 0d |  | 付培胜 [50%] | 1h |
| 281 | 2.2.5.1.3 | 编辑组织 | 0.25d? | 2019-10-15 13:00 | 2019-10-15 15:00 | 280 | -0.2d | 0d |  | 付培胜 [50%] | 1h |
| 282 | 2.2.5.1.4 | 删除组织 | 0.25d? | 2019-10-15 15:00 | 2019-10-15 17:00 | 281 | -0.2d | 0d |  | 付培胜 [50%] | 1h |

| ID | WBS | Task | Duration | Start | Finish | Predecessors | Total slack | Free slack | Resources | Work |
| --- | --- | --- | --- | --- | --- | --- | --- | --- | --- | --- |
| 283 | 2.2.5.2 | **审核用户** | 1d? | 2019-10-16 08:00 | 2019-10-16 17:00 |  |  |  |  | 2h |
| 284 | 2.2.5.2.1 | 审核用户列表 | 0.25d? | 2019-10-16 08:00 | 2019-10-16 10:00 | 282 | -0.2d | 0d | 付培胜 [50%] | 1h |
| 285 | 2.2.5.2.2 | 删除审核用户 | 0.25d? | 2019-10-16 10:00 | 2019-10-16 12:00 | 284 | -0.2d | 0d | 付培胜 [50%] | 1h |
| 286 | 2.2.5.3 | **用户管理** | 3d? | 2019-10-16 08:00 | 2019-10-18 17:00 |  |  |  |  | 7.2h |
| 287 | 2.2.5.3.1 | 用户列表 | 0.25d? | 2019-10-16 13:00 | 2019-10-16 15:00 | 285 | -0.2d | 0d | 付培胜 [50%] | 1h |
| 288 | 2.2.5.3.2 | 新增用户 | 0.5d? | 2019-10-16 15:00 | 2019-10-17 10:00 | 287 | -0.2d | 0d | 付培胜 [50%] | 2h |
| 289 | 2.2.5.3.3 | 密文导入用户 | 0.15d? | 2019-10-17 10:00 | 2019-10-17 11:12 | 288 | -0.2d | 0d | 付培胜 [50%] | 0.6h |
| 290 | 2.2.5.3.4 | 明文导入用户 | 0.15d? | 2019-10-17 11:12 | 2019-10-17 13:24 | 289 | -0.2d | 0d | 付培胜 [50%] | 0.6h |
| 291 | 2.2.5.3.5 | 导出用户 | 0.15d? | 2019-10-17 13:24 | 2019-10-17 14:36 | 290 | -0.2d | 0d | 付培胜 [50%] | 0.6h |
| 292 | 2.2.5.3.6 | 启用/锁定用户 | 0.15d? | 2019-10-17 14:36 | 2019-10-17 15:48 | 291 | -0.2d | 0d | 付培胜 [50%] | 0.6h |
| 293 | 2.2.5.3.7 | 查看用户信息 | 0.15d? | 2019-10-17 15:48 | 2019-10-17 17:00 | 292 | -0.2d | 0d | 付培胜 [50%] | 0.6h |
| 294 | 2.2.5.3.8 | 编辑用户 | 0.15d? | 2019-10-18 08:00 | 2019-10-18 09:12 | 293 | -0.2d | 0d | 付培胜 [50%] | 0.6h |
| 295 | 2.2.5.3.9 | 删除用户 | 0.15d? | 2019-10-18 09:12 | 2019-10-18 10:24 | 294 | -0.2d | 0d | 付培胜 [50%] | 0.6h |
| 296 | 2.2.6 | **查询统计** | 3d? | 2019-10-18 08:00 | 2019-10-22 17:00 |  |  |  |  | 10h |
| 297 | 2.2.6.1 | **用户考勤** | 1d? | 2019-10-18 08:00 | 2019-10-18 17:00 |  |  |  |  | 2.6h |
| 298 | 2.2.6.1.1 | 用户考勤列表 | 0.15d? | 2019-10-18 10:24 | 2019-10-18 11:36 | 295 | -0.2d | 0d | 付培胜 [50%] | 0.6h |
| 299 | 2.2.6.1.2 | 编辑用户考勤 | 0.25d? | 2019-10-18 11:36 | 2019-10-18 14:36 | 298 | -0.2d | 0d | 付培胜 [50%] | 1h |
| 300 | 2.2.6.1.3 | 删除用户考勤 | 0.25d? | 2019-10-18 14:36 | 2019-10-18 16:36 | 299 | -0.2d | 0d | 付培胜 [50%] | 1h |
| 301 | 2.2.6.2 | **在线用户** | 2d? | 2019-10-18 08:00 | 2019-10-21 17:00 |  |  |  |  | 1.2h |
| 302 | 2.2.6.2.1 | 在线用户列表 | 0.15d? | 2019-10-18 16:36 | 2019-10-21 08:48 | 300 | -0.2d | 0d | 付培胜 [50%] | 0.6h |
| 303 | 2.2.6.2.2 | 查看在线用户详情 | 0.15d? | 2019-10-21 08:48 | 2019-10-21 10:00 | 302 | -0.2d | 0d | 付培胜 [50%] | 0.6h |
| 304 | 2.2.6.3 | **命令日志** | 1d? | 2019-10-21 08:00 | 2019-10-21 17:00 |  |  |  |  | 1.8h |
| 305 | 2.2.6.3.1 | 命令日志列表 | 0.15d? | 2019-10-21 10:00 | 2019-10-21 11:12 | 303 | -0.2d | 0d | 付培胜 [50%] | 0.6h |
| 306 | 2.2.6.3.2 | 查看详细命令 | 0.15d? | 2019-10-21 11:12 | 2019-10-21 13:24 | 305 | -0.2d | 0d | 付培胜 [50%] | 0.6h |
| 307 | 2.2.6.3.3 | 删除命令日志 | 0.15d? | 2019-10-21 13:24 | 2019-10-21 14:36 | 306 | -0.2d | 0d | 付培胜 [50%] | 0.6h |

| ID | WBS | Task | Duration | Start | Finish | Predecessors | Total slack | Free slack | Resources | Work |
| --- | --- | --- | --- | --- | --- | --- | --- | --- | --- | --- |
| 308 | 2.2.6.4 | **操作日志** | 1d? | 2019-10-21 08:00 | 2019-10-21 17:00 |  |  |  |  | 1.2h |
| 309 | 2.2.6.4.1 | 操作日志列表 | 0.15d? | 2019-10-21 14:36 | 2019-10-21 15:48 | 307 | -0.2d | 0d | 付培胜 [50%] | 0.6h |
| 310 | 2.2.6.4.2 | 查看操作日志 | 0.15d? | 2019-10-21 15:48 | 2019-10-21 17:00 | 309 | -0.2d | 0d | 付培胜 [50%] | 0.6h |
| 311 | 2.2.6.5 | **恢复日志** | 1d? | 2019-10-22 08:00 | 2019-10-22 17:00 |  |  |  |  | 2h |
| 312 | 2.2.6.5.1 | 恢复日志列表 | 0.25d? | 2019-10-22 08:00 | 2019-10-22 10:00 | 310 | -0.2d | 0d | 付培胜 [50%] | 1h |
| 313 | 2.2.6.5.2 | 查看恢复日志备注 | 0.25d? | 2019-10-22 10:00 | 2019-10-22 12:00 | 312 | -0.2d | 0d | 付培胜 [50%] | 1h |
| 314 | 2.2.6.6 | **设备使用情况** | 1d? | 2019-10-22 08:00 | 2019-10-22 17:00 |  |  |  |  | 1.2h |
| 315 | 2.2.6.6.1 | 备使用情况列表 | 0.15d? | 2019-10-22 13:00 | 2019-10-22 14:12 | 313 | -0.2d | 0d | 付培胜 [50%] | 0.6h |
| 316 | 2.2.6.6.2 | 删除设备使用情况 | 0.15d? | 2019-10-22 14:12 | 2019-10-22 15:24 | 315 | -0.2d | 0d | 付培胜 [50%] | 0.6h |
| 317 | 2.2.7 | **实验帮助** | 2d? | 2019-10-22 08:00 | 2019-10-23 17:00 |  |  |  |  | 3h |
| 318 | 2.2.7.1 | 实验帮助-实验帮助列表 | 0.25d? | 2019-10-22 15:24 | 2019-10-23 08:24 | 316 | -0.2d | 0d | 付培胜 [50%] | 1h |
| 319 | 2.2.7.2 | 实验帮助-上传实验帮助 | 0.25d? | 2019-10-23 08:24 | 2019-10-23 10:24 | 318 | -0.2d | 0d | 付培胜 [50%] | 1h |
| 320 | 2.2.7.3 | 实验帮助-删除实验帮助 | 0.25d? | 2019-10-23 10:24 | 2019-10-23 13:24 | 319 | -0.2d | 0d | 付培胜 [50%] | 1h |
| 321 | 2.2.8 | **设备恢复** | 2d? | 2019-10-23 08:00 | 2019-10-24 17:00 |  |  |  |  | 2h |
| 322 | 2.2.8.1 | 设备恢复-设备恢复列表 | 0.5d? | 2019-10-23 13:24 | 2019-10-24 08:24 | 320 | -0.2d | 0d | 付培胜 [50%] | 2h |
| 323 | 2.2.9 | **系统管理** | 1d? | 2019-10-24 08:00 | 2019-10-24 17:00 |  |  |  |  | 3.2h |
| 324 | 2.2.9.1 | 系统设置-编辑系统设置 | 0.25d? | 2019-10-24 08:24 | 2019-10-24 10:24 | 322 | -0.2d | 0d | 付培胜 [50%] | 1h |
| 325 | 2.2.9.2 | 系统公告-系统公告列表 | 0.1d? | 2019-10-24 10:24 | 2019-10-24 11:12 | 324 | -0.2d | 0d | 付培胜 [50%] | 0.4h |
| 326 | 2.2.9.3 | 系统公告-发布系统公告 | 0.15d? | 2019-10-24 11:12 | 2019-10-24 13:24 | 325 | -0.2d | 0d | 付培胜 [50%] | 0.6h |
| 327 | 2.2.9.4 | 系统公告-查看系统公告详情 | 0.1d? | 2019-10-24 13:24 | 2019-10-24 14:12 | 326 | -0.2d | 0d | 付培胜 [50%] | 0.4h |
| 328 | 2.2.9.5 | 系统公告-删除系统公告 | 0.1d? | 2019-10-24 14:12 | 2019-10-24 15:00 | 327 | -0.2d | 0d | 付培胜 [50%] | 0.4h |
| 329 | 2.2.9.6 | 系统升级 | 0.1d? | 2019-10-24 15:00 | 2019-10-24 15:48 | 328 | -0.2d | 0d | 付培胜 [50%] | 0.4h |
| 330 | 2.2.10 | **前台功能** | 7.78d? | 2019-09-23 08:00 | 2019-10-08 15:15 |  |  |  |  | 13.4h |
| 331 | 2.2.10.1 | **前台首页** | 5d? | 2019-10-24 08:00 | 2019-10-30 17:00 |  |  |  |  | 12h |
| 332 | 2.2.10.1.1 | **课堂实验** | 2d? | 2019-10-24 08:00 | 2019-10-25 17:00 |  |  |  |  | 4h |
| 333 | 2.2.10.1.1.1 | 课堂实验-课堂实验列表 | 0.5d? | 2019-10-24 15:48 | 2019-10-25 10:48 | 329 | -0.2d | 0d | 付培胜 [50%] | 2h |
| 334 | 2.2.10.1.1.2 | 课堂实验-操作课堂实验 | 0.5d? | 2019-10-25 10:48 | 2019-10-25 15:48 | 333 | -0.2d | 0d | 付培胜 [50%] | 2h |

| ID | WBS | Task | Type | Duration | Start | Finish | Predecessors | Total slack | Free slack | Resources | Work |
| --- | --- | --- | --- | --- | --- | --- | --- | --- | --- | --- | --- |
| 335 | 2.2.10.1.2 | **实验报告** |  | 2d? | 2019-10-25 08:00 | 2019-10-28 17:00 |  |  |  |  | 4h |
| 336 | 2.2.10.1.2.1 | 实验报告-实验报告列表 |  | 0.25d? | 2019-10-25 15:48 | 2019-10-28 08:48 | 334 | -0.2d | 0d | 付培胜 [50%] | 1h |
| 337 | 2.2.10.1.2.2 | 实验报告-查看实验报告详情 |  | 0.25d? | 2019-10-28 08:48 | 2019-10-28 10:48 | 336 | -0.2d | 0d | 付培胜 [50%] | 1h |
| 338 | 2.2.10.1.2.3 | 实验报告-批改实验报告 |  | 0.25d? | 2019-10-28 10:48 | 2019-10-28 13:48 | 337 | -0.2d | 0d | 付培胜 [50%] | 1h |
| 339 | 2.2.10.1.2.4 | 实验报告-删除实验报告 |  | 0.25d? | 2019-10-28 13:48 | 2019-10-28 15:48 | 338 | -0.2d | 0d | 付培胜 [50%] | 1h |
| 340 | 2.2.10.1.3 | **实验日志** |  | 2d? | 2019-10-28 08:00 | 2019-10-29 17:00 |  |  |  |  | 2h |
| 341 | 2.2.10.1.3.1 | 实验日志-实验日志列表 |  | 0.25d? | 2019-10-28 15:48 | 2019-10-29 08:48 | 339 | -0.2d | 0d | 付培胜 [50%] | 1h |
| 342 | 2.2.10.1.3.2 | 实验日志-查看详细命令 |  | 0.25d? | 2019-10-29 08:48 | 2019-10-29 10:48 | 341 | -0.2d | 0d | 付培胜 [50%] | 1h |
| 343 | 2.2.10.1.4 | **用户信息** |  | 1d? | 2019-10-29 08:00 | 2019-10-29 17:00 |  |  |  |  | 0.8h |
| 344 | 2.2.10.1.4.1 | 信息修改-编辑用户信息 |  | 0.1d? | 2019-10-29 10:48 | 2019-10-29 11:36 | 342 | -0.2d | 0d | 付培胜 [50%] | 0.4h |
| 345 | 2.2.10.1.4.2 | 密码修改-修改密码 |  | 0.1d? | 2019-10-29 11:36 | 2019-10-29 13:24 | 344 | -0.2d | 0d | 付培胜 [50%] | 0.4h |
| 346 | 2.2.10.1.5 | **实验帮助** |  | 1d? | 2019-10-29 08:00 | 2019-10-29 17:00 |  |  |  |  | 0.4h |
| 347 | 2.2.10.1.5.1 | 实验帮助-实验帮助列表 |  | 0.1d? | 2019-10-29 13:24 | 2019-10-29 14:12 | 345 | -0.2d | 0d | 付培胜 [50%] | 0.4h |
| 348 | 2.2.10.1.6 | **系统公告** |  | 1d? | 2019-10-29 08:00 | 2019-10-29 17:00 |  |  |  |  | 0.8h |
| 349 | 2.2.10.1.6.1 | 系统公告-系统公告列表 |  | 0.1d? | 2019-10-29 14:12 | 2019-10-29 15:00 | 347 | -0.2d | 0d | 付培胜 [50%] | 0.4h |
| 350 | 2.2.10.1.6.2 | 系统公告-查看系统公告详情 |  | 0.1d? | 2019-10-29 15:00 | 2019-10-29 15:48 | 349 | -0.2d | 0d | 付培胜 [50%] | 0.4h |
| 351 | 2.2.10.2 | **登录注册** |  | 1d? | 2019-10-29 08:00 | 2019-10-29 17:00 |  |  |  |  | 1.4h |
| 352 | 2.2.10.2.1 | 登录页面 |  | 0.1d? | 2019-10-29 15:48 | 2019-10-29 16:36 | 350 | -0.2d | 0d | 付培胜 [50%] | 0.4h |
| 353 | 2.2.10.2.2 | 注册页面 |  | 0.25d? | 2019-10-29 16:36 | 2019-10-30 09:36 | 352 | -0.2d | 0d | 付培胜 [50%] | 1h |
| 354 | 2.3 | **测试用例评审** |  | 5.7d | 2019-09-17 08:00 | 2019-09-24 14:36 |  |  |  |  | 72h |
| 355 | 2.3.1 | 第一阶段测试用例评审 | manual | 1d | 2019-09-30 13:00 | 2019-10-08 12:00 | 213 |  |  | fenglei; wangzy; guominf | 24h |
| 356 | 2.3.2 | 第二阶段测试用例评审 | manual | 1d | 2019-10-21 10:48 | 2019-10-22 10:48 | 239 |  |  | fenglei; wangzy; guominf | 24h |
| 357 | 2.3.3 | 第三阶段测试用例评审 | manual | 1d | 2019-10-31 14:36 | 2019-11-01 14:36 | 262 |  |  | fenglei; wangzy; guominf | 24h |
| 358 | 2.4 | **测试执行** |  | 68.66d | 2019-09-17 08:00 | 2019-12-25 14:14 |  | 11.33d |  |  | 500h |
| 359 | 2.4.1 | **后台功能测试** |  | 54.37d | 2019-09-17 08:00 | 2019-12-05 10:57 |  | 0d |  |  | 212h |
| 360 | 2.4.1.1 | **设备管理** |  | 4d | 2019-10-08 10:40 | 2019-10-12 10:40 |  | 0d |  |  | 32h |
| 361 | 2.4.1.1.1 | 实验设备管理 | manual | 2d | 2019-10-08 10:40 | 2019-10-10 10:40 |  |  |  | 张幽雅 | 16h |
| 362 | 2.4.1.1.2 | 设备类别设置 | manual | 0.5d | 2019-10-10 10:40 | 2019-10-10 15:40 | 361 |  |  | 张幽雅 | 4h |
| 363 | 2.4.1.1.3 | 设备型号管理 | manual | 0.5d | 2019-10-10 15:40 | 2019-10-11 10:40 | 362 |  |  | 张幽雅 | 4h |
| 364 | 2.4.1.1.4 | 设备命令过滤 | manual | 0.5d | 2019-10-11 10:40 | 2019-10-11 15:40 | 363 |  |  | 张幽雅 | 4h |
| 365 | 2.4.1.1.5 | 虚拟化设备管理 | manual | 0.5d | 2019-10-11 15:40 | 2019-10-12 10:40 | 364 |  |  | 张幽雅 | 4h |

| ID | WBS | Task | Type | Duration | Start | Finish | Predecessors | Total slack | Free slack | Resources | Work |
| --- | --- | --- | --- | --- | --- | --- | --- | --- | --- | --- | --- |
| 366 | 2.4.1.2 | **实验室管理** |  | 3.65d | 2019-10-21 10:48 | 2019-10-24 17:00 |  | 0d |  |  | 24h |
| 367 | 2.4.1.2.1 | 实验室管理 | manual | 2d | 2019-10-21 10:48 | 2019-10-23 10:48 |  |  |  | 张幽雅 | 16h |
| 368 | 2.4.1.2.2 | 底层设备控制模块 | manual | 0.5d | 2019-10-24 08:00 | 2019-10-24 12:00 | 367 |  |  | 张幽雅 | 4h |
| 369 | 2.4.1.2.3 | 网络拓扑管理模块 | manual | 0.5d | 2019-10-24 13:00 | 2019-10-24 17:00 | 368 |  |  | 张幽雅 | 4h |
| 370 | 2.4.1.3 | **课程管理** |  | 3d | 2019-09-17 08:00 | 2019-09-19 17:00 |  | 39.5d |  |  | 24h |
| 371 | 2.4.1.3.1 | 课程管理 |  | 1.5d | 2019-09-17 08:00 | 2019-09-18 12:00 |  | 39.5d | 0d | 张幽雅 | 12h |
| 372 | 2.4.1.3.2 | 课程分类 |  | 0.5d | 2019-09-18 13:00 | 2019-09-18 17:00 | 371 | 39.5d | 0d | 张幽雅 | 4h |
| 373 | 2.4.1.3.3 | 课程调度 |  | 1d | 2019-09-19 08:00 | 2019-09-19 17:00 | 372 | 39.5d | 0d | 张幽雅 | 8h |
| 374 | 2.4.1.4 | **拓扑管理** |  | 3d | 2019-09-20 08:00 | 2019-09-24 17:00 |  | 39.5d |  |  | 24h |
| 375 | 2.4.1.4.1 | 网络拓扑分类 |  | 1d | 2019-09-20 08:00 | 2019-09-20 17:00 | 373 | 39.5d | 0d | 张幽雅 | 8h |
| 376 | 2.4.1.4.2 | 拓扑端口管理 |  | 1d | 2019-09-23 08:00 | 2019-09-23 17:00 | 375 | 39.5d | 0d | 张幽雅 | 8h |
| 377 | 2.4.1.4.3 | 网络拓扑设计 |  | 1d | 2019-09-24 08:00 | 2019-09-24 17:00 | 376 | 39.5d | 0d | 张幽雅 | 8h |
| 378 | 2.4.1.5 | **用户管理** |  | 2.5d | 2019-09-25 08:00 | 2019-09-27 12:00 |  | 39.5d | 32.59d |  | 20h |
| 379 | 2.4.1.5.1 | 组织管理 |  | 0.5d | 2019-09-25 08:00 | 2019-09-25 12:00 | 377 | 39.5d | 0d | 张幽雅 | 4h |
| 380 | 2.4.1.5.2 | 审核用户 |  | 0.5d | 2019-09-25 13:00 | 2019-09-25 17:00 | 379 | 39.5d | 0d | 张幽雅 | 4h |
| 381 | 2.4.1.5.3 | 用户管理 |  | 1.5d | 2019-09-26 08:00 | 2019-09-27 12:00 | 380 | 39.5d | 0d | 张幽雅 | 12h |
| 382 | 2.4.1.6 | 后台bug回归测试 | manual | 3d | 2019-11-18 08:43 | 2019-11-21 08:43 | 378 |  |  | 张幽雅 | 24h |
| 383 | 2.4.1.7 | **查询统计** |  | 3.5d | 2019-09-27 13:00 | 2019-10-08 17:00 |  | 39.5d |  |  | 28h |
| 384 | 2.4.1.7.1 | 用户考勤 |  | 0.5d | 2019-09-27 13:00 | 2019-09-27 17:00 | 381 | 39.5d | 0d | 张幽雅 | 4h |
| 385 | 2.4.1.7.2 | 在线用户 |  | 1d | 2019-09-29 08:00 | 2019-09-29 17:00 | 384 | 39.5d | 0d | 张幽雅 | 8h |
| 386 | 2.4.1.7.3 | 命令日志 |  | 0.5d | 2019-09-30 08:00 | 2019-09-30 12:00 | 385 | 39.5d | 0d | 张幽雅 | 4h |
| 387 | 2.4.1.7.4 | 操作日志 |  | 0.5d | 2019-09-30 13:00 | 2019-09-30 17:00 | 386 | 39.5d | 0d | 张幽雅 | 4h |
| 388 | 2.4.1.7.5 | 恢复日志 |  | 0.5d | 2019-10-08 08:00 | 2019-10-08 12:00 | 387 | 39.5d | 0d | 张幽雅 | 4h |
| 389 | 2.4.1.7.6 | 设备使用情况 |  | 0.5d | 2019-10-08 13:00 | 2019-10-08 17:00 | 388 | 39.5d | 0d | 张幽雅 | 4h |
| 390 | 2.4.1.8 | 实验帮助 |  | 1d | 2019-10-09 08:00 | 2019-10-09 17:00 | 389 | 39.5d | 0d | 张幽雅 | 8h |
| 391 | 2.4.1.9 | 设备恢复 |  | 1d | 2019-10-10 08:00 | 2019-10-10 17:00 | 390 | 39.5d | 0d | 张幽雅 | 8h |
| 392 | 2.4.1.10 | 系统管理 |  | 0.5d | 2019-10-11 08:00 | 2019-10-11 12:00 | 391 | 39.5d | 37.87d | 张幽雅 | 4h |
| 393 | 2.4.1.11 | 后台bug回归测试 | manual | 2d | 2019-12-03 10:57 | 2019-12-05 10:57 | 392 |  |  | 张幽雅 | 16h |

| ID | WBS | Task | Type | Duration | Start | Finish | Predecessors | Total slack | Free slack | Resources | Work |
| --- | --- | --- | --- | --- | --- | --- | --- | --- | --- | --- | --- |
| 394 | 2.4.2 | **前台功能测试** |  | 7d | 2019-10-28 08:00 | 2019-11-05 17:00 |  | 48d |  |  | 56h |
| 395 | 2.4.2.1 | **前台首页** |  | 6.5d | 2019-10-28 08:00 | 2019-11-05 12:00 |  | 48d |  |  | 52h |
| 396 | 2.4.2.1.1 | 课堂实验 |  | 3d | 2019-10-28 08:00 | 2019-10-30 17:00 | 332 | 48d | 0d | 陈珊珊 | 24h |
| 397 | 2.4.2.1.2 | 实验报告 |  | 1d | 2019-10-31 08:00 | 2019-10-31 17:00 | 335, 396 | 48d | 0d | 陈珊珊 | 8h |
| 398 | 2.4.2.1.3 | 实验日志 |  | 1d | 2019-11-01 08:00 | 2019-11-01 17:00 | 340, 397 | 48d | 0d | 陈珊珊 | 8h |
| 399 | 2.4.2.1.4 | 用户信息 |  | 0.5d | 2019-11-04 08:00 | 2019-11-04 12:00 | 343, 398 | 48d | 0d | 陈珊珊 | 4h |
| 400 | 2.4.2.1.5 | 实验帮助 |  | 0.5d | 2019-11-04 13:00 | 2019-11-04 17:00 | 346, 399 | 48d | 0d | 陈珊珊 | 4h |
| 401 | 2.4.2.1.6 | 系统公告 |  | 0.5d | 2019-11-05 08:00 | 2019-11-05 12:00 | 348, 400 | 48d | 0d | 陈珊珊 | 4h |
| 402 | 2.4.2.2 | 登录注册 |  | 0.5d | 2019-11-05 13:00 | 2019-11-05 17:00 | 351, 401 | 48d | 0d | 陈珊珊 | 4h |
| 403 | 2.4.3 | 前台bug回归 |  | 3d | 2019-11-06 08:00 | 2019-11-08 17:00 | 402 | 48d |  | 陈珊珊 | 24h |
| 404 | 2.4.4 | 前后台集成测试 |  | 10d | 2019-12-05 10:57 | 2019-12-19 10:57 | 393 | 1.63d | 1.29d | 张幽雅; 陈珊珊 | 160h |
| 405 | 2.4.5 | 前后台确认测试 | manual | 3d | 2019-12-20 14:14 | 2019-12-25 14:14 | 404 |  |  | 张幽雅; 陈珊珊 | 48h |
| 406 | 3 | **硬件5台设备改制** |  | 68d | 2019-10-14 08:00 | 2020-01-15 17:00 |  | 0d |  |  |  |
| 407 | 3.1 | 设备型号确认 | manual | 1d | 2019-10-14 08:00 | 2019-10-14 17:00 | 182 |  |  |  |  |
| 408 | 3.2 | 源头产品到货 | manual | 1d | 2019-12-25 08:00 | 2019-12-25 17:00 |  |  |  |  |  |
| 409 | 3.3 | **产品化工作** |  | 25d | 2019-10-15 08:00 | 2019-11-18 17:00 |  | 0d |  |  |  |
| 410 | 3.3.1 | 安排产品化设计 | manual | 4d | 2019-10-15 08:00 | 2019-10-18 17:00 | 407 |  |  |  |  |
| 411 | 3.3.2 | 产品化打样 | manual | 10d | 2019-10-21 08:00 | 2019-11-01 17:00 | 410 |  |  |  |  |
| 412 | 3.3.3 | 产品化确认 | manual | 4d | 2019-11-04 08:00 | 2019-11-07 17:00 | 411 |  |  |  |  |
| 413 | 3.3.4 | 产品化备料 | manual | 7d | 2019-11-08 08:00 | 2019-11-18 17:00 | 412 |  |  |  |  |
| 414 | 3.4 | MTO产测脚本 | manual | 6d | 2019-12-25 14:14 | 2020-01-02 14:14 | 405 |  |  |  |  |
| 415 | 3.5 | 安排改制 | manual | 8d | 2020-01-03 08:00 | 2020-01-14 17:00 | 414 |  |  |  |  |
| 416 | 3.6 | 交货 | manual | 1d | 2020-01-15 08:00 | 2020-01-15 17:00 | 415 |  |  |  |  |
